# Plan de Trabajo CEI

Schedule from MS Project, 2014-03-03 to 2018-07-16, A marks actual dates.

## Calendars

- Estándar: Mon-Fri 09:00-13:00, 15:00-19:00; Sat-Sun off. Exceptions (off unless hours are given): 2018-05-01 (Dia del Trabajo).

## Resources

| Resource |
| --- |
| VMENDIETA |
| KAVILES |
| AV |
| CH |
| AV. CH |
| JPI |
| DESARROLLO |
| MPURILLA |
| WGALINDEZ |
| MPURILLA-1 |
| EYATACO |
| PESPINOZA |
| AREYES |
| JQUENTA |
| MPURILLA-2 |
| JPI-1 |
| 2 |
| JPI-2 |
| DAIA |
| DGIT |
| DAT |
| DCC |

## Schedule

| ID | WBS | Task | Duration | Start | Finish | Predecessors | Complete | Remaining | Total slack | Free slack | Constraint | Work |
| --- | --- | --- | --- | --- | --- | --- | --- | --- | --- | --- | --- | --- |
| 1 | 1 | **Control Electrónico del IGV** | 1140d? | 2014-03-03 A | 2018-07-16 |  | 2% | 1119.14d? | 0d |  |  | 3336h |
| 2 | 1.1 | **Gestión del Proyecto** | 1085d | 2014-03-03 | 2018-04-27 |  |  |  | 55d |  |  |  |
| 3 | 1.1.1 | **Iniciación** | 0.5d | 2018-04-23 | 2018-04-23 |  |  |  | 55d |  |  |  |
| 4 | 1.1.1.1 | **Project Charter** | 0.5d | 2018-04-23 | 2018-04-23 |  |  |  | 59.5d |  |  |  |
| 5 | 1.1.1.1.1 | Elaborar el Project Charter | 3h | 2018-04-23 | 2018-04-23 |  |  |  | 59.5d | 0d |  |  |
| 6 | 1.1.1.1.2 | Revisar el Project Charter | 1h | 2018-04-23 | 2018-04-23 | 5 |  |  | 59.5d |  |  |  |
| 7 | 1.1.1.2 | **Scope Statement** | 0.5d | 2018-04-23 | 2018-04-23 |  |  |  | 55d |  |  |  |
| 8 | 1.1.1.2.1 | Elaborar el Scope Statement | 3h | 2018-04-23 | 2018-04-23 |  |  |  | 55d | 0d |  |  |
| 9 | 1.1.1.2.2 | Revisar el Scope Statement | 1h | 2018-04-23 | 2018-04-23 | 8 |  |  | 55d | 0d |  |  |
| 10 | 1.1.2 | **Plan de Proyecto** | 4.5d | 2018-04-23 | 2018-04-27 |  |  |  | 55d |  |  |  |
| 11 | 1.1.2.1 | Elaborar el Plan de Proyecto | 36h | 2018-04-23 | 2018-04-27 | 9 |  |  | 55d |  |  |  |
| 12 | 1.1.3 | **Informes de Estado del Proyecto** | 70.12d | 2014-03-03 | 2014-06-09 |  |  |  | 1069.88d |  |  |  |
| 13 | 1.1.3.1 | Informes de Estado del Proyecto 1 | 1h | 2014-03-03 | 2014-03-03 |  |  |  | 1139.88d |  | start no earlier than 2014-03-03 |  |
| 14 | 1.1.3.2 | Informes de Estado del Proyecto 2 | 1h | 2014-03-10 | 2014-03-10 |  |  |  | 1134.88d |  | start no earlier than 2014-03-10 |  |
| 15 | 1.1.3.3 | Informes de Estado del Proyecto 3 | 1h | 2014-03-17 | 2014-03-17 |  |  |  | 1129.88d |  | start no earlier than 2014-03-17 |  |
| 16 | 1.1.3.4 | Informes de Estado del Proyecto 4 | 1h | 2014-03-24 | 2014-03-24 |  |  |  | 1124.88d |  | start no earlier than 2014-03-24 |  |
| 17 | 1.1.3.5 | Informes de Estado del Proyecto 5 | 1h | 2014-03-31 | 2014-03-31 |  |  |  | 1119.88d |  | start no earlier than 2014-03-31 |  |
| 18 | 1.1.3.6 | Informes de Estado del Proyecto 6 | 1h | 2014-04-07 | 2014-04-07 |  |  |  | 1114.88d |  | start no earlier than 2014-04-07 |  |
| 19 | 1.1.3.7 | Informes de Estado del Proyecto 7 | 1h | 2014-04-14 | 2014-04-14 |  |  |  | 1109.88d |  | start no earlier than 2014-04-14 |  |
| 20 | 1.1.3.8 | Informes de Estado del Proyecto 8 | 1h | 2014-04-21 | 2014-04-21 |  |  |  | 1104.88d |  | start no earlier than 2014-04-21 |  |
| 21 | 1.1.3.9 | Informes de Estado del Proyecto 9 | 1h | 2014-04-28 | 2014-04-28 |  |  |  | 1099.88d |  | start no earlier than 2014-04-28 |  |
| 22 | 1.1.3.10 | Informes de Estado del Proyecto 10 | 1h | 2014-05-05 | 2014-05-05 |  |  |  | 1094.88d |  | start no earlier than 2014-05-05 |  |
| 23 | 1.1.3.11 | Informes de Estado del Proyecto 11 | 1h | 2014-05-12 | 2014-05-12 |  |  |  | 1089.88d |  | start no earlier than 2014-05-12 |  |
| 24 | 1.1.3.12 | Informes de Estado del Proyecto 12 | 1h | 2014-05-19 | 2014-05-19 |  |  |  | 1084.88d |  | start no earlier than 2014-05-19 |  |
| 25 | 1.1.3.13 | Informes de Estado del Proyecto 13 | 1h | 2014-05-26 | 2014-05-26 |  |  |  | 1079.38d | 0d | start no earlier than 2014-05-26 |  |
| 26 | 1.1.3.14 | Informes de Estado del Proyecto 14 | 1h | 2014-06-02 | 2014-06-02 |  |  |  | 1074.88d |  | start no earlier than 2014-06-02 |  |
| 27 | 1.1.3.15 | Informes de Estado del Proyecto 15 | 1h | 2014-06-09 | 2014-06-09 |  |  |  | 1069.88d |  | start no earlier than 2014-06-09 |  |

| ID | WBS | Task | Type | Duration | Start | Finish | Predecessors | Complete | Remaining | Total slack | Free slack | Constraint |
| --- | --- | --- | --- | --- | --- | --- | --- | --- | --- | --- | --- | --- |
| 28 | 1.1.4 | **Reunión de Coordinación Semanal** |  | 70.12d | 2014-03-03 | 2014-06-09 |  |  |  | 1069.88d |  |  |
| 29 | 1.1.4.1 | Reunión de Coordinación Semanal 1 |  | 1h | 2014-03-03 | 2014-03-03 |  |  |  | 1139.88d |  | start no earlier than 2014-03-03 |
| 30 | 1.1.4.2 | Reunión de Coordinación Semanal 2 |  | 1h | 2014-03-10 | 2014-03-10 |  |  |  | 1134.88d |  | start no earlier than 2014-03-10 |
| 31 | 1.1.4.3 | Reunión de Coordinación Semanal 3 |  | 1h | 2014-03-17 | 2014-03-17 |  |  |  | 1129.88d |  | start no earlier than 2014-03-17 |
| 32 | 1.1.4.4 | Reunión de Coordinación Semanal 4 |  | 1h | 2014-03-24 | 2014-03-24 |  |  |  | 1124.88d |  | start no earlier than 2014-03-24 |
| 33 | 1.1.4.5 | Reunión de Coordinación Semanal 5 |  | 1h | 2014-03-31 | 2014-03-31 |  |  |  | 1119.88d |  | start no earlier than 2014-03-31 |
| 34 | 1.1.4.6 | Reunión de Coordinación Semanal 6 |  | 1h | 2014-04-07 | 2014-04-07 |  |  |  | 1114.88d |  | start no earlier than 2014-04-07 |
| 35 | 1.1.4.7 | Reunión de Coordinación Semanal 7 |  | 1h | 2014-04-14 | 2014-04-14 |  |  |  | 1109.88d |  | start no earlier than 2014-04-14 |
| 36 | 1.1.4.8 | Reunión de Coordinación Semanal 8 |  | 1h | 2014-04-21 | 2014-04-21 |  |  |  | 1104.88d |  | start no earlier than 2014-04-21 |
| 37 | 1.1.4.9 | Reunión de Coordinación Semanal 9 |  | 1h | 2014-04-28 | 2014-04-28 |  |  |  | 1099.88d |  | start no earlier than 2014-04-28 |
| 38 | 1.1.4.10 | Reunión de Coordinación Semanal 10 |  | 1h | 2014-05-05 | 2014-05-05 |  |  |  | 1094.88d |  | start no earlier than 2014-05-05 |
| 39 | 1.1.4.11 | Reunión de Coordinación Semanal 11 |  | 1h | 2014-05-12 | 2014-05-12 |  |  |  | 1089.88d |  | start no earlier than 2014-05-12 |
| 40 | 1.1.4.12 | Reunión de Coordinación Semanal 12 |  | 1h | 2014-05-19 | 2014-05-19 |  |  |  | 1084.88d |  | start no earlier than 2014-05-19 |
| 41 | 1.1.4.13 | Reunión de Coordinación Semanal 13 |  | 1h | 2014-05-26 | 2014-05-26 |  |  |  | 1079.38d | 0d | start no earlier than 2014-05-26 |
| 42 | 1.1.4.14 | Reunión de Coordinación Semanal 14 |  | 1h | 2014-06-02 | 2014-06-02 |  |  |  | 1074.88d |  | start no earlier than 2014-06-02 |
| 43 | 1.1.4.15 | Reunión de Coordinación Semanal 15 |  | 1h | 2014-06-09 | 2014-06-09 |  |  |  | 1069.88d |  | start no earlier than 2014-06-09 |
| 44 | 1.1.5 | **Cierre del Proyecto** |  | 0.5d | 2014-05-26 | 2014-05-26 |  |  |  | 1079.38d |  |  |
| 45 | 1.1.5.1 | Elaborar Documentos de Cierre del Proyecto |  | 4h | 2014-05-26 | 2014-05-26 | 25, 41 |  |  | 1079.38d |  |  |
| 46 | 1.2 | **Disponibilidad de Información** |  | 42.5d | 2018-04-23 A | 2018-06-21 |  | 31% | 29.16d | 17.5d |  |  |
| 47 | 1.2.1 | **Elecución** |  | 41.5d | 2018-04-23 A | 2018-06-20 |  | 32% | 28.16d | 17.5d |  |  |
| 48 | 1.2.1.1 | **Control de Calidad** |  | 41d | 2018-04-23 A | 2018-06-19 |  | 32% | 28d | 17.5d |  |  |
| 49 | 1.2.1.1.1 | Revisar Modelo de IGV - Teradata |  | 6d | 2018-04-23 A | 2018-04-30 A |  | 100% |  |  |  |  |
| 50 | 1.2.1.1.2 | Revisar Modelo de PN – Teradata |  | 35d | 2018-05-02 A | 2018-06-19 | 49 | 20% | 28d | 17.5d | 0d |  |
| 51 | 1.2.1.1.3 | Entregable: Modelo del IGV y PN -Teradata -QA | milestone | 0d | 2018-06-19 | 2018-06-19 | 50 |  |  | 17.5d | 0d |  |

| ID | WBS | Task | Type | Duration | Start | Finish | Predecessors | Complete | Remaining | Total slack | Free slack | Resources | Work |
| --- | --- | --- | --- | --- | --- | --- | --- | --- | --- | --- | --- | --- | --- |
| 52 | 1.2.1.2 | **Implantación** |  | 0.5d | 2018-06-20 A | 2018-06-20 |  | 50% | 0.25d | 17.5d |  |  |  |
| 53 | 1.2.1.2.1 | Modelo de IGV - Teradata |  | 0.5d | 2018-06-20 A | 2018-06-20 A | 51 | 100% |  |  |  |  |  |
| 54 | 1.2.1.2.2 | Modelo de PN – Teradata |  | 0.5d | 2018-06-20 | 2018-06-20 | 51 |  |  | 17.5d | 0d |  |  |
| 55 | 1.2.1.2.3 | Entregable: Modelo del IGV y PN -Teradata - Implementado | milestone | 0d | 2018-06-20 | 2018-06-20 | 54 |  |  | 17.5d | 0d |  |  |
| 56 | 1.2.2 | **Cierre** |  | 1d | 2018-06-20 | 2018-06-21 |  |  |  | 17.5d |  |  |  |
| 57 | 1.2.2.1 | Acta de aceptación del Producto |  | 1d | 2018-06-20 | 2018-06-21 | 55 |  |  | 17.5d | 0d |  |  |
| 58 | 1.2.2.2 | Entregable: Acta de Aceptación del Producto - Aprobado | milestone | 0d | 2018-06-21 | 2018-06-21 | 57 |  |  | 17.5d |  |  |  |
| 59 | 1.3 | **Gestión de Riesgo del Cumplimiento Tributario del IGV** |  | 60d | 2018-04-23 | 2018-07-16 |  |  |  | 0d |  |  | 3336h |
| 60 | 1.3.1 | **Planificación** |  | 4d | 2018-04-23 | 2018-04-26 |  |  |  | 56d |  |  | 24h |
| 61 | 1.3.1.1 | Levantamiento de Requerimiento de Variable de Condición de Domicilio - Estado del Contribuyente |  | 1d | 2018-04-23 | 2018-04-23 |  |  |  | 56d | 0d |  |  |
| 62 | 1.3.1.2 | Levantamiento de Requerimiento de Variable de Omiso a la Declaración MEPECO |  | 1d | 2018-04-24 | 2018-04-24 | 61 |  |  | 56d | 0d | JPI | 8h |
| 63 | 1.3.1.3 | Levantamiento de Requerimiento de Variable de Omiso a la Declaración PRICO |  | 1d | 2018-04-25 | 2018-04-25 | 62 |  |  | 56d | 0d | JPI | 8h |
| 64 | 1.3.1.4 | Levantamiento de Requerimiento de Servicio de Perfil |  | 1d | 2018-04-26 | 2018-04-26 | 63 |  |  | 56d | 0d | JPI | 8h |
| 65 | 1.3.1.5 | Entregable: Documento de Requerimientos de Matriz PRC | milestone | 0d | 2018-04-26 | 2018-04-26 | 64 |  |  | 56d |  | JPI |  |
| 66 | 1.3.2 | **Ejecución** |  | 56d | 2018-04-23 | 2018-07-10 |  |  |  | 3d |  |  | 3272h |
| 67 | 1.3.2.1 | **Arquitectura** |  | 45d | 2018-04-23 | 2018-06-25 |  |  |  | 15d |  |  | 1120h |
| 68 | 1.3.2.1.1 | **Construcción** |  | 45d | 2018-04-23 | 2018-06-25 |  |  |  | 15d |  |  | 1056h |
| 69 | 1.3.2.1.1.1 | Ambiente Desarrollo |  | 19d | 2018-04-23 | 2018-05-18 |  |  |  | 15d | 0d | DAIA; DGIT; DAT | 456h |
| 70 | 1.3.2.1.1.2 | Ambiente Calidad |  | 23d | 2018-04-23 | 2018-05-24 |  |  |  | 34d | 0d | DAIA; DGIT; DAT | 552h |
| 71 | 1.3.2.1.1.3 | Elaboración de Documentación Técnica e Instrucctivo. |  | 6d | 2018-06-18 | 2018-06-25 | 69FS+20d |  |  | 15d |  | DAIA | 48h |
| 72 | 1.3.2.1.2 | **Implantación** |  | 5d | 2018-05-21 | 2018-05-25 |  |  |  | 36d |  |  | 48h |
| 73 | 1.3.2.1.2.1 | Ambiente de Desarrollo |  | 1d | 2018-05-21 | 2018-05-21 | 69 |  |  | 40d |  | DAIA; DGIT; DAT | 24h |
| 74 | 1.3.2.1.2.2 | Ambiente de Calidad |  | 1d | 2018-05-25 | 2018-05-25 | 70 |  |  | 34d | 0d | DAIA; DGIT; DAT | 24h |
| 75 | 1.3.2.1.3 | **Post Implantación** |  | 2d | 2018-05-28 | 2018-05-29 |  |  |  | 34d |  |  | 16h |
| 76 | 1.3.2.1.3.1 | Pruebas de rendimiento |  | 2d | 2018-05-28 | 2018-05-29 | 74 |  |  | 34d |  | DCC | 16h |

| ID | WBS | Task | Type | Duration | Start | Finish | Predecessors | Total slack | Free slack | Resources | Work |
| --- | --- | --- | --- | --- | --- | --- | --- | --- | --- | --- | --- |
| 77 | 1.3.2.2 | **Desarrollo** |  | 25d | 2018-04-23 | 2018-05-28 |  | 3d |  |  | 952h |
| 78 | 1.3.2.2.1 | Matriz PRC - Variable de Condición de Domicilio - Estado del Contribuyente |  | 25d | 2018-04-23 | 2018-05-28 |  | 3d | 0d | WGALINDEZ | 200h |
| 79 | 1.3.2.2.2 | **Matriz PRC - Variable de Omiso a la Declaración MEPECO** |  | 25d | 2018-04-23 | 2018-05-28 |  | 3d |  |  | 200h |
| 80 | 1.3.2.2.2.1 | Ajustes en los procesos de la infracción. Graba en la tabla de variables |  | 17d | 2018-04-23 | 2018-05-16 |  | 3d | 0d | KAVILES | 136h |
| 81 | 1.3.2.2.2.2 | Actualización de la omisión desde la tabla de variables cuando Llega la DJ |  | 8d | 2018-05-17 | 2018-05-28 | 80 | 3d | 0d | KAVILES | 64h |
| 82 | 1.3.2.2.3 | Matriz PRC - Variable de Omiso a la Declaración PRICO |  | 25d | 2018-04-23 | 2018-05-28 |  | 3d | 0d | EYATACO | 200h |
| 83 | 1.3.2.2.4 | **Matriz PRC - Variable Omisos Libros Electrónicos - Padrón acotado** |  | 25d | 2018-04-23 | 2018-05-28 |  | 3d |  |  | 200h |
| 84 | 1.3.2.2.4.1 | La generación de la variable de omiso de libros electrónicos |  | 17d | 2018-04-23 | 2018-05-16 |  | 3d | 0d | VMENDIETA | 136h |
| 85 | 1.3.2.2.4.2 | Los ajustes a la emisión electrónica basada en el perfil. |  | 8d | 2018-05-17 | 2018-05-28 | 84 | 3d | 0d | VMENDIETA | 64h |
| 86 | 1.3.2.2.5 | Matriz PRC - Servicio de Perfil |  | 19d | 2018-04-23 | 2018-05-18 |  | 9d | 0d | JQUENTA | 152h |
| 87 | 1.3.2.2.6 | Entregable: Matriz de Riesgos del Contrinuyente Desarrollada | milestone | 0d | 2018-05-28 | 2018-05-28 | 78, 81, 82, 85, 86 | 35d |  |  |  |
| 88 | 1.3.2.3 | **Control de Calidad** |  | 36d | 2018-05-21 | 2018-07-09 |  | 3d |  |  | 1200h |
| 89 | 1.3.2.3.1 | Matriz PRC - Variable de Condición de Domicilio - Estado del Contribuyente |  | 30d | 2018-05-29 | 2018-07-09 | 78 | 3d | 0d | MPURILLA | 240h |
| 90 | 1.3.2.3.2 | Matriz PRC - Variable de Omiso a la Declaración MEPECO |  | 30d | 2018-05-29 | 2018-07-09 | 81 | 3d | 0d | MPURILLA-1 | 240h |
| 91 | 1.3.2.3.3 | Matriz PRC - Variable de Omiso a la Declaración PRICO |  | 30d | 2018-05-29 | 2018-07-09 | 82 | 3d | 0d | PESPINOZA | 240h |
| 92 | 1.3.2.3.4 | Matriz PRC - Variable Omisos Libros Electrónicos - Padrón acotado |  | 30d | 2018-05-29 | 2018-07-09 | 85 | 3d | 0d | AREYES | 240h |
| 93 | 1.3.2.3.5 | Matriz PRC - Servicio de Perfil |  | 30d | 2018-05-21 | 2018-06-29 | 86 | 9d | 6d | MPURILLA-2 | 240h |
| 94 | 1.3.2.3.6 | Entregable: Matriz de Riesgos del Contrinuyente - QA | milestone | 0d | 2018-07-09 | 2018-07-09 | 89, 90, 91, 92, 93 | 3d | 0d |  |  |
| 95 | 1.3.2.4 | **Implantación** |  | 1d | 2018-07-10 | 2018-07-10 |  | 3d |  |  |  |
| 96 | 1.3.2.4.1 | Insatación de Matriz de Riesgos del Contribuyente |  | 1d | 2018-07-10 | 2018-07-10 | 94 | 3d | 0d |  |  |
| 97 | 1.3.2.4.2 | Entregable: Matriz de Riesgos del Contrinuyente -Implementada | milestone | 0d | 2018-07-10 | 2018-07-10 | 96 | 3d | 0d |  |  |
| 98 | 1.3.3 | **Cierre** |  | 1d | 2018-07-11 | 2018-07-11 |  | 3d |  |  | 8h |
| 99 | 1.3.3.1 | Matriz de Riesgos del Contribuyente |  | 1d | 2018-07-11 | 2018-07-11 | 97 | 3d | 0d | JPI | 8h |
| 100 | 1.3.3.2 | Entregable: Matriz de Riesgos del Contrinuyente -Implementada | milestone | 0d | 2018-07-11 | 2018-07-11 | 99 | 3d |  |  |  |

| ID | WBS | Task | Type | Duration | Start | Finish | Predecessors | Total slack | Free slack | Resources | Work |
| --- | --- | --- | --- | --- | --- | --- | --- | --- | --- | --- | --- |
| 101 | 1.3.4 | **Variables del IGV para la selección en la gestión masiva y selectiva** |  | 1d | 2018-04-23 | 2018-04-23 |  | 59d |  |  | 8h |
| 102 | 1.3.4.1 | **Planificación** |  | 1d | 2018-04-23 | 2018-04-23 |  | 59d |  |  | 8h |
| 103 | 1.3.4.1.1 | Levantamiento de Requerimientos de Variables del IGV para la selección en la gestión masiva y selectiva |  | 1d | 2018-04-23 | 2018-04-23 |  | 59d | 0d | JPI-2 | 8h |
| 104 | 1.3.4.1.2 | Entregable: Documento de Requerimientos de Variables del IGV para la selección en la gestión masiva y selectiva | milestone | 0d | 2018-04-23 | 2018-04-23 | 103 | 59d |  |  |  |
| 105 | 1.3.4.2 | **Ejecución** |  | 1d | 2018-04-23 | 2018-04-23 |  | 59d |  |  |  |
| 106 | 1.3.4.2.1 | **Desarrollo** |  | 1d | 2018-04-23 | 2018-04-23 |  | 59d |  |  |  |
| 107 | 1.3.4.2.1.1 | Desarrollar Variables del IGV para la selección en la gestión masiva y selectiva |  | 1d | 2018-04-23 | 2018-04-23 |  | 59d |  |  |  |
| 108 | 1.3.4.2.1.2 | Entregable: Variables del IGV para la selección en la gestión masiva y selectiva- Desarrollo | milestone | 0d | 2018-04-23 | 2018-04-23 |  | 60d |  |  |  |
| 109 | 1.3.4.2.2 | **Control de Calidad** |  | 1d | 2018-04-23 | 2018-04-23 |  | 59d |  |  |  |
| 110 | 1.3.4.2.2.1 | CC Variables del IGV para la selección en la gestión masiva y selectiva |  | 1d | 2018-04-23 | 2018-04-23 |  | 59d |  |  |  |
| 111 | 1.3.4.2.2.2 | Entregable: Variables del IGV para la selección en la gestión masiva y selectiva-QA | milestone | 0d | 2018-04-23 | 2018-04-23 |  | 60d |  |  |  |
| 112 | 1.3.4.2.3 | **Implantación** |  | 1d | 2018-04-23 | 2018-04-23 |  | 59d |  |  |  |
| 113 | 1.3.4.2.3.1 | Implementar Variables del IGV para la selección en la gestión masiva y selectiva |  | 1d | 2018-04-23 | 2018-04-23 |  | 59d |  |  |  |
| 114 | 1.3.4.2.3.2 | Entregable: Variables del IGV para la selección en la gestión masiva y selectiva - Implementado | milestone | 0d | 2018-04-23 | 2018-04-23 |  | 60d |  |  |  |
| 115 | 1.3.4.3 | **Cierre** |  | 1d | 2018-04-23 | 2018-04-23 |  | 59d |  |  |  |
| 116 | 1.3.4.3.1 | Realizar el Acta de Aprobación de Variables del IGV para la selección en la gestión masiva y selectiva |  | 1d | 2018-04-23 | 2018-04-23 |  | 59d |  |  |  |
| 117 | 1.3.4.3.2 | Entregable: Acta de Aprobación de Variables del IGV para la selección en la gestión masiva y selectiva | milestone | 0d | 2018-04-23 | 2018-04-23 |  | 60d |  |  |  |
| 118 | 1.3.5 | **Variables del PPNN para la selección en la gestión masiva y 2.5 selectiva** |  | 2d | 2018-04-23 | 2018-04-24 |  | 58d |  |  |  |
| 119 | 1.3.5.1 | **Planificación** |  | 2d | 2018-04-23 | 2018-04-24 |  | 58d |  |  |  |
| 120 | 1.3.5.1.1 | Levantamiento de Requerimientos de Variables del PPNN para la selección en la gestión masiva y 2.5 selectiva |  | 2d | 2018-04-23 | 2018-04-24 |  | 58d |  |  |  |
| 121 | 1.3.5.1.2 | Entregable: Documento de Requerimientos de Variables del PPNN para la selección en la gestión masiva y 2.5 selectiva | milestone | 0d | 2018-04-23 | 2018-04-23 |  | 60d |  |  |  |
| 122 | 1.3.5.2 | **Ejecución** |  | 1d | 2018-04-23 | 2018-04-23 |  | 59d |  |  |  |
| 123 | 1.3.5.2.1 | **Desarrollo** |  | 1d | 2018-04-23 | 2018-04-23 |  | 59d |  |  |  |
| 124 | 1.3.5.2.1.1 | Desarrollar Variables del PPNN para la selección en la gestión masiva y 2.5 selectiva |  | 1d | 2018-04-23 | 2018-04-23 |  | 59d |  |  |  |
| 125 | 1.3.5.2.1.2 | Entregable: Variables del PPNN para la selección en la gestión masiva y 2.5 selectiva | milestone | 0d | 2018-04-23 | 2018-04-23 |  | 60d |  |  |  |

| ID | WBS | Task | Type | Duration | Start | Finish | Total slack |
| --- | --- | --- | --- | --- | --- | --- | --- |
| 126 | 1.3.5.2.2 | **Control de Calidad** |  | 1d | 2018-04-23 | 2018-04-23 | 59d |
| 127 | 1.3.5.2.2.1 | CC Variables del PPNN para la selección en la gestión masiva y 2.5 selectiva |  | 1d | 2018-04-23 | 2018-04-23 | 59d |
| 128 | 1.3.5.2.2.2 | Entregable: Variables del PPNN para la selección en la gestión masiva y 2.5 selectiva-QA | milestone | 0d | 2018-04-23 | 2018-04-23 | 60d |
| 129 | 1.3.5.2.3 | **Implantación** |  | 1d | 2018-04-23 | 2018-04-23 | 59d |
| 130 | 1.3.5.2.3.1 | Implementar Variables del PPNN para la selección en la gestión masiva y 2.5 selectiva |  | 1d | 2018-04-23 | 2018-04-23 | 59d |
| 131 | 1.3.5.2.3.2 | Entregable: Variables del PPNN para la selección en la gestión masiva y 2.5 selectiva - Implementado | milestone | 0d | 2018-04-23 | 2018-04-23 | 60d |
| 132 | 1.3.5.3 | **Cierre** |  | 2d | 2018-04-23 | 2018-04-24 | 58d |
| 133 | 1.3.5.3.1 | Realizar el Acta de Aprobación de Variables del PPNN para la selección en la gestión masiva y 2.5 selectiva |  | 2d | 2018-04-23 | 2018-04-24 | 58d |
| 134 | 1.3.5.3.2 | Entregable: Acta de Aprobación de Variables del PPNN para la selección en la gestión masiva y 2.5 selectiva | milestone | 0d | 2018-04-23 | 2018-04-23 | 60d |
| 135 | 1.3.6 | **Actualizar vinculaciones a los ONR** |  | 2d | 2018-04-23 | 2018-04-24 | 58d |
| 136 | 1.3.6.1 | **Planificación** |  | 1d | 2018-04-23 | 2018-04-23 | 59d |
| 137 | 1.3.6.1.1 | Levantamiento de Requerimientos de Actualizar vinculaciones a los ONR |  | 1d | 2018-04-23 | 2018-04-23 | 59d |
| 138 | 1.3.6.1.2 | Entregable: Documento de Requerimientos de Actualizar vinculaciones a los ONR | milestone | 0d | 2018-04-23 | 2018-04-23 | 60d |
| 139 | 1.3.6.2 | **Ejecución** |  | 1d | 2018-04-23 | 2018-04-23 | 59d |
| 140 | 1.3.6.2.1 | **Desarrollo** |  | 1d | 2018-04-23 | 2018-04-23 | 59d |
| 141 | 1.3.6.2.1.1 | Desarrollar Actualizar vinculaciones a los ONR |  | 1d | 2018-04-23 | 2018-04-23 | 59d |
| 142 | 1.3.6.2.1.2 | Entregable: Actualizar vinculaciones a los ONR | milestone | 0d | 2018-04-23 | 2018-04-23 | 60d |
| 143 | 1.3.6.2.2 | **Control de Calidad** |  | 1d | 2018-04-23 | 2018-04-23 | 59d |
| 144 | 1.3.6.2.2.1 | CC Actualizar vinculaciones a los ONR |  | 1d | 2018-04-23 | 2018-04-23 | 59d |
| 145 | 1.3.6.2.2.2 | Entregable: Actualizar vinculaciones a los ONR-QA | milestone | 0d | 2018-04-23 | 2018-04-23 | 60d |
| 146 | 1.3.6.2.3 | **Implantación** |  | 1d | 2018-04-23 | 2018-04-23 | 59d |
| 147 | 1.3.6.2.3.1 | Implementar Actualizar vinculaciones a los ONR |  | 1d | 2018-04-23 | 2018-04-23 | 59d |
| 148 | 1.3.6.2.3.2 | Entregable: Actualizar vinculaciones a los ONR - Implementado | milestone | 0d | 2018-04-23 | 2018-04-23 | 60d |
| 149 | 1.3.6.3 | **Cierre** |  | 2d | 2018-04-23 | 2018-04-24 | 58d |
| 150 | 1.3.6.3.1 | Realizar el Acta de Aprobación de Actualizar vinculaciones a los ONR |  | 2d | 2018-04-23 | 2018-04-24 | 58d |
| 151 | 1.3.6.3.2 | Entregable: Acta de Aprobación de Actualizar vinculaciones a los ONR | milestone | 0d | 2018-04-23 | 2018-04-23 | 60d |

| ID | WBS | Task | Type | Duration | Start | Finish | Predecessors | Total slack | Resources | Work |
| --- | --- | --- | --- | --- | --- | --- | --- | --- | --- | --- |
| 152 | 1.3.7 | **Variables de inconsistencias del RCVE** |  | 60d | 2018-04-23 | 2018-07-16 |  | 0d |  | 24h |
| 153 | 1.3.7.1 | **Planificación** |  | 1d | 2018-04-23 | 2018-04-23 |  | 59d |  | 8h |
| 154 | 1.3.7.1.1 | Levantamiento de Requerimientos de Variables de Inconsistencias del RCVE |  | 1d | 2018-04-23 | 2018-04-23 |  | 59d | JPI | 8h |
| 155 | 1.3.7.1.2 | Entregable: Documento de Requerimientos de Variables de Inconsistencia del RCVE | milestone | 0d | 2018-04-23 | 2018-04-23 |  | 60d |  |  |
| 156 | 1.3.7.2 | **Ejecución** |  | 60d | 2018-04-23 | 2018-07-16 |  | 0d |  |  |
| 157 | 1.3.7.2.1 | **Desarrollo** |  | 60d | 2018-04-23 | 2018-07-16 |  | 0d |  |  |
| 158 | 1.3.7.2.1.1 | Desarrollar Variables de inconsistencias del RCVE |  | 60d | 2018-04-23 | 2018-07-16 |  | 0d |  |  |
| 159 | 1.3.7.2.1.2 | Entregable: Variables de inconsistencias del RCVE - Desarrollo | milestone | 0d | 2018-07-16 | 2018-07-16 | 158 | 0d |  |  |
| 160 | 1.3.7.2.2 | **Control de Calidad** |  | 1d | 2018-04-23 | 2018-04-23 |  | 59d |  |  |
| 161 | 1.3.7.2.2.1 | Variables de inconsistencias del RCVE |  | 1d | 2018-04-23 | 2018-04-23 |  | 59d |  |  |
| 162 | 1.3.7.2.2.2 | Entregable: Variables de inconsistencias del RCVE-QA | milestone | 0d | 2018-04-23 | 2018-04-23 |  | 60d |  |  |
| 163 | 1.3.7.2.3 | **Implantación** |  | 1d | 2018-04-23 | 2018-04-23 |  | 59d |  |  |
| 164 | 1.3.7.2.3.1 | Variables de inconsistencias del RCVE |  | 1d | 2018-04-23 | 2018-04-23 |  | 59d |  |  |
| 165 | 1.3.7.2.3.2 | Entregable: Variables de inconsistencias del RCVE - Implementado | milestone | 0d | 2018-04-23 | 2018-04-23 |  | 60d |  |  |
| 166 | 1.3.7.3 | **Cierre** |  | 1d | 2018-04-23 | 2018-04-23 |  | 59d | JPI-1 | 16h |
| 167 | 1.3.7.3.1 | Realizar el Acta de Aprobación de Variables de inconsistencias del RCVE |  | 1d | 2018-04-23 | 2018-04-23 |  | 59d | JPI-1 | 8h |
| 168 | 1.3.7.3.2 | Entregable: Acta de Aprobación de Variables de Inconsistencias del RCVE | milestone | 0d | 2018-04-23 | 2018-04-23 |  | 60d |  |  |
| 169 | 1.3.8 | APP de Consulta de Cumplimiento Tributario del IGV |  | 1d | 2018-04-23 | 2018-04-23 |  | 59d |  |  |
| 170 | 1.4 | **Actualización del Registro Único de Contribuyente** |  | 1d? | 2018-04-23 | 2018-04-23 |  | 59d |  |  |
| 171 | 1.4.1 | **Campaña de Actualización email** |  | 1d? | 2018-04-23 | 2018-04-23 |  | 59d |  |  |
| 172 | 1.4.1.1 | **Planificación** |  | 1d? | 2018-04-23 | 2018-04-23 |  | 59d |  |  |
| 173 | 1.4.1.1.1 | Levantamiento de Requerimientos de Campaña de Actualización email |  | 1d? | 2018-04-23 | 2018-04-23 |  | 59d |  |  |
| 174 | 1.4.1.1.2 | Entregable: Documento de Requerimientos de Campaña de Actualización email |  | 1d? | 2018-04-23 | 2018-04-23 |  | 59d |  |  |
| 175 | 1.4.1.2 | **Ejecución** |  | 1d? | 2018-04-23 | 2018-04-23 |  | 59d |  |  |
| 176 | 1.4.1.2.1 | **Desarrollo** |  | 1d? | 2018-04-23 | 2018-04-23 |  | 59d |  |  |
| 177 | 1.4.1.2.1.1 | Desarrollar Campaña de Actualización email |  | 1d? | 2018-04-23 | 2018-04-23 |  | 59d |  |  |
| 178 | 1.4.1.2.1.2 | Entregable: Campaña de Actualización email-Desarrolado |  | 1d? | 2018-04-23 | 2018-04-23 |  | 59d |  |  |

| ID | WBS | Task | Duration | Start | Finish | Total slack |
| --- | --- | --- | --- | --- | --- | --- |
| 179 | 1.4.1.2.2 | **Control de Calidad** | 1d? | 2018-04-23 | 2018-04-23 | 59d |
| 180 | 1.4.1.2.2.1 | CC Campaña de Actualización email | 1d? | 2018-04-23 | 2018-04-23 | 59d |
| 181 | 1.4.1.2.2.2 | Entregable: Campaña de Actualización email-QA | 1d? | 2018-04-23 | 2018-04-23 | 59d |
| 182 | 1.4.1.2.3 | **Implantación** | 1d? | 2018-04-23 | 2018-04-23 | 59d |
| 183 | 1.4.1.2.3.1 | Implementar Campaña de Actualización email | 1d? | 2018-04-23 | 2018-04-23 | 59d |
| 184 | 1.4.1.2.3.2 | Entregable: Campaña de Actualización email - Implementado | 1d? | 2018-04-23 | 2018-04-23 | 59d |
| 185 | 1.4.1.3 | **Cierre** | 1d? | 2018-04-23 | 2018-04-23 | 59d |
| 186 | 1.4.1.3.1 | Realizar el Acta de Aprobación de Campaña de Actualización email | 1d? | 2018-04-23 | 2018-04-23 | 59d |
| 187 | 1.4.1.3.2 | Entregable: Acta de Aprobación de Campaña de Actualización email | 1d? | 2018-04-23 | 2018-04-23 | 59d |
| 188 | 1.5 | **Campaña de Actualización celular** | 1d? | 2018-04-23 | 2018-04-23 | 59d |
| 189 | 1.5.1 | **Planificación** | 1d? | 2018-04-23 | 2018-04-23 | 59d |
| 190 | 1.5.1.1 | Levantamiento de Requerimientos de Campaña de Actualización celular | 1d? | 2018-04-23 | 2018-04-23 | 59d |
| 191 | 1.5.1.2 | Entregable: Documento de Requerimientos de Campaña de Actualización celular | 1d? | 2018-04-23 | 2018-04-23 | 59d |
| 192 | 1.5.2 | **Ejecución** | 1d? | 2018-04-23 | 2018-04-23 | 59d |
| 193 | 1.5.2.1 | **Desarrollo** | 1d? | 2018-04-23 | 2018-04-23 | 59d |
| 194 | 1.5.2.1.1 | Desarrollar Campaña de Actualización celular | 1d? | 2018-04-23 | 2018-04-23 | 59d |
| 195 | 1.5.2.1.2 | Entregable: Campaña de Actualización celular-Desarrolado | 1d? | 2018-04-23 | 2018-04-23 | 59d |
| 196 | 1.5.2.2 | **Control de Calidad** | 1d? | 2018-04-23 | 2018-04-23 | 59d |
| 197 | 1.5.2.2.1 | CC Campaña de Actualización celular | 1d? | 2018-04-23 | 2018-04-23 | 59d |
| 198 | 1.5.2.2.2 | Entregable: Campaña de Actualización celular-QA | 1d? | 2018-04-23 | 2018-04-23 | 59d |
| 199 | 1.5.2.3 | **Implantación** | 1d? | 2018-04-23 | 2018-04-23 | 59d |
| 200 | 1.5.2.3.1 | Implementar Campaña de Actualización celular | 1d? | 2018-04-23 | 2018-04-23 | 59d |
| 201 | 1.5.2.3.2 | Entregable: Campaña de Actualización celular- Implementado | 1d? | 2018-04-23 | 2018-04-23 | 59d |
| 202 | 1.5.3 | **Cierre** | 1d? | 2018-04-23 | 2018-04-23 | 59d |
| 203 | 1.5.3.1 | Realizar el Acta de Aprobación de Campaña de Actualización celular | 1d? | 2018-04-23 | 2018-04-23 | 59d |
| 204 | 1.5.3.2 | Entregable: Acta de Aprobación de Campaña de Actualización celular | 1d? | 2018-04-23 | 2018-04-23 | 59d |

| ID | WBS | Task | Duration | Start | Finish | Total slack |
| --- | --- | --- | --- | --- | --- | --- |
| 205 | 1.6 | **Controles electrónicos a la autorización y emisión de CdP** | 1d? | 2018-04-23 | 2018-04-23 | 59d |
| 206 | 1.6.1 | **Alertas de inconsistencias en el CPE** | 1d? | 2018-04-23 | 2018-04-23 | 59d |
| 207 | 1.6.1.1 | **Planificación** | 1d? | 2018-04-23 | 2018-04-23 | 59d |
| 208 | 1.6.1.1.1 | Levantamiento de Requerimientos de Alertas de inconsistencias en el CPE | 1d? | 2018-04-23 | 2018-04-23 | 59d |
| 209 | 1.6.1.1.2 | Entregable: Documento de Requerimientos de Alertas de inconsistencias en el CPE | 1d? | 2018-04-23 | 2018-04-23 | 59d |
| 210 | 1.6.1.2 | **Ejecución** | 1d? | 2018-04-23 | 2018-04-23 | 59d |
| 211 | 1.6.1.2.1 | **Desarrollo** | 1d? | 2018-04-23 | 2018-04-23 | 59d |
| 212 | 1.6.1.2.1.1 | Desarrollar Alertas de inconsistencias en el CPE | 1d? | 2018-04-23 | 2018-04-23 | 59d |
| 213 | 1.6.1.2.1.2 | Entregable: Alertas de inconsistencias en el CPE-Desarrolado | 1d? | 2018-04-23 | 2018-04-23 | 59d |
| 214 | 1.6.1.2.2 | **Control de Calidad** | 1d? | 2018-04-23 | 2018-04-23 | 59d |
| 215 | 1.6.1.2.2.1 | CC Alertas de inconsistencias en el CPE | 1d? | 2018-04-23 | 2018-04-23 | 59d |
| 216 | 1.6.1.2.2.2 | Entregable: Alertas de inconsistencias en el CPE-QA | 1d? | 2018-04-23 | 2018-04-23 | 59d |
| 217 | 1.6.1.2.3 | **Implantación** | 1d? | 2018-04-23 | 2018-04-23 | 59d |
| 218 | 1.6.1.2.3.1 | Implementar Alertas de inconsistencias en el CPE | 1d? | 2018-04-23 | 2018-04-23 | 59d |
| 219 | 1.6.1.2.3.2 | Entregable: Alertas de inconsistencias en el CPE- Implementado | 1d? | 2018-04-23 | 2018-04-23 | 59d |
| 220 | 1.6.1.3 | **Cierre** | 1d? | 2018-04-23 | 2018-04-23 | 59d |
| 221 | 1.6.1.3.1 | Realizar el Acta de Aprobación de Alertas de inconsistencias en el CPE | 1d? | 2018-04-23 | 2018-04-23 | 59d |
| 222 | 1.6.1.3.2 | Entregable: Acta de Aprobación de Alertas de inconsistencias en el CPE | 1d? | 2018-04-23 | 2018-04-23 | 59d |
| 223 | 1.6.2 | **Restricción a la Autorización de CdP** | 1d? | 2018-04-23 | 2018-04-23 | 59d |
| 224 | 1.6.2.1 | **Planificación** | 1d? | 2018-04-23 | 2018-04-23 | 59d |
| 225 | 1.6.2.1.1 | Levantamiento de Requerimientos de Restricción a la Autorización de CdP | 1d? | 2018-04-23 | 2018-04-23 | 59d |
| 226 | 1.6.2.1.2 | Entregable: Documento de Requerimientos de Restricción a la Autorización de CdP | 1d? | 2018-04-23 | 2018-04-23 | 59d |
| 227 | 1.6.2.2 | **Ejecución** | 1d? | 2018-04-23 | 2018-04-23 | 59d |
| 228 | 1.6.2.2.1 | **Desarrollo** | 1d? | 2018-04-23 | 2018-04-23 | 59d |
| 229 | 1.6.2.2.1.1 | Desarrollar Restricción a la Autorización de CdP | 1d? | 2018-04-23 | 2018-04-23 | 59d |
| 230 | 1.6.2.2.1.2 | Entregable: Restricción a la Autorización de CdP-Desarrolado | 1d? | 2018-04-23 | 2018-04-23 | 59d |

| ID | WBS | Task | Duration | Start | Finish | Total slack |
| --- | --- | --- | --- | --- | --- | --- |
| 231 | 1.6.2.2.2 | **Control de Calidad** | 1d? | 2018-04-23 | 2018-04-23 | 59d |
| 232 | 1.6.2.2.2.1 | CC Restricción a la Autorización de CdP | 1d? | 2018-04-23 | 2018-04-23 | 59d |
| 233 | 1.6.2.2.2.2 | Entregable: Restricción a la Autorización de CdP-QA | 1d? | 2018-04-23 | 2018-04-23 | 59d |
| 234 | 1.6.2.2.3 | **Implantación** | 1d? | 2018-04-23 | 2018-04-23 | 59d |
| 235 | 1.6.2.2.3.1 | Implementar Restricción a la Autorización de CdP | 1d? | 2018-04-23 | 2018-04-23 | 59d |
| 236 | 1.6.2.2.3.2 | Entregable: Restricción a la Autorización de CdP- Implementado | 1d? | 2018-04-23 | 2018-04-23 | 59d |
| 237 | 1.6.2.3 | **Cierre** | 1d? | 2018-04-23 | 2018-04-23 | 59d |
| 238 | 1.6.2.3.1 | Realizar el Acta de Aprobación de Restricción a la Autorización de CdP | 1d? | 2018-04-23 | 2018-04-23 | 59d |
| 239 | 1.6.2.3.2 | Entregable: Acta de Aprobación de Restricción a la Autorización de CdP | 1d? | 2018-04-23 | 2018-04-23 | 59d |
| 240 | 1.6.3 | **Limitación de CdP Autorizados** | 1d? | 2018-04-23 | 2018-04-23 | 59d |
| 241 | 1.6.3.1 | **Planificación** | 1d? | 2018-04-23 | 2018-04-23 | 59d |
| 242 | 1.6.3.1.1 | Levantamiento de Requerimientos de Limitación de CdP Autorizados | 1d? | 2018-04-23 | 2018-04-23 | 59d |
| 243 | 1.6.3.1.2 | Entregable: Documento de Requerimientos de Limitación de CdP Autorizados | 1d? | 2018-04-23 | 2018-04-23 | 59d |
| 244 | 1.6.3.2 | **Ejecución** | 1d? | 2018-04-23 | 2018-04-23 | 59d |
| 245 | 1.6.3.2.1 | **Desarrollo** | 1d? | 2018-04-23 | 2018-04-23 | 59d |
| 246 | 1.6.3.2.1.1 | Desarrollar Limitación de CdP Autorizados | 1d? | 2018-04-23 | 2018-04-23 | 59d |
| 247 | 1.6.3.2.1.2 | Entregable: Limitación de CdP Autorizados-Desarrolado | 1d? | 2018-04-23 | 2018-04-23 | 59d |
| 248 | 1.6.3.2.2 | **Control de Calidad** | 1d? | 2018-04-23 | 2018-04-23 | 59d |
| 249 | 1.6.3.2.2.1 | CC Limitación de CdP Autorizados | 1d? | 2018-04-23 | 2018-04-23 | 59d |
| 250 | 1.6.3.2.2.2 | Entregable: Limitación de CdP Autorizados-QA | 1d? | 2018-04-23 | 2018-04-23 | 59d |
| 251 | 1.6.3.2.3 | **Implantación** | 1d? | 2018-04-23 | 2018-04-23 | 59d |
| 252 | 1.6.3.2.3.1 | Implementar Limitación de CdP Autorizados | 1d? | 2018-04-23 | 2018-04-23 | 59d |
| 253 | 1.6.3.2.3.2 | Entregable: Limitación de CdP Autorizados- Implementado | 1d? | 2018-04-23 | 2018-04-23 | 59d |
| 254 | 1.6.3.3 | **Cierre** | 1d? | 2018-04-23 | 2018-04-23 | 59d |
| 255 | 1.6.3.3.1 | Realizar el Acta de Aprobación de Limitación de CdP Autorizados | 1d? | 2018-04-23 | 2018-04-23 | 59d |
| 256 | 1.6.3.3.2 | Entregable: Acta de Aprobación de Limitación de CdP Autorizados | 1d? | 2018-04-23 | 2018-04-23 | 59d |

| ID | WBS | Task | Duration | Start | Finish | Total slack |
| --- | --- | --- | --- | --- | --- | --- |
| 257 | 1.6.4 | **Restricción a la Emisión de CdP (web services)** | 1d? | 2018-04-23 | 2018-04-23 | 59d |
| 258 | 1.6.4.1 | **Planificación** | 1d? | 2018-04-23 | 2018-04-23 | 59d |
| 259 | 1.6.4.1.1 | Levantamiento de Requerimientos de Restricción a la Emisión de CdP (web services) | 1d? | 2018-04-23 | 2018-04-23 | 59d |
| 260 | 1.6.4.1.2 | Entregable: Documento de Requerimientos de Restricción a la Emisión de CdP (web services) | 1d? | 2018-04-23 | 2018-04-23 | 59d |
| 261 | 1.6.4.2 | **Ejecución** | 1d? | 2018-04-23 | 2018-04-23 | 59d |
| 262 | 1.6.4.2.1 | **Desarrollo** | 1d? | 2018-04-23 | 2018-04-23 | 59d |
| 263 | 1.6.4.2.1.1 | Desarrollar Restricción a la Emisión de CdP (web services) | 1d? | 2018-04-23 | 2018-04-23 | 59d |
| 264 | 1.6.4.2.1.2 | Entregable: Restricción a la Emisión de CdP (web services) - Desarrollado | 1d? | 2018-04-23 | 2018-04-23 | 59d |
| 265 | 1.6.4.2.2 | **Control de Calidad** | 1d? | 2018-04-23 | 2018-04-23 | 59d |
| 266 | 1.6.4.2.2.1 | CC Restricción a la Emisión de CdP (web services) | 1d? | 2018-04-23 | 2018-04-23 | 59d |
| 267 | 1.6.4.2.2.2 | Entregable: Restricción a la Emisión de CdP (web services)-QA | 1d? | 2018-04-23 | 2018-04-23 | 59d |
| 268 | 1.6.4.2.3 | **Implantación** | 1d? | 2018-04-23 | 2018-04-23 | 59d |
| 269 | 1.6.4.2.3.1 | Implementar Restricción a la Emisión de CdP (web services) | 1d? | 2018-04-23 | 2018-04-23 | 59d |
| 270 | 1.6.4.2.3.2 | Entregable: Restricción a la Emisión de CdP (web services)- Implementado | 1d? | 2018-04-23 | 2018-04-23 | 59d |
| 271 | 1.6.4.3 | **Cierre** | 1d? | 2018-04-23 | 2018-04-23 | 59d |
| 272 | 1.6.4.3.1 | Realizar el Acta de Aprobación de Restricción a la Emisión de CdP (web services) | 1d? | 2018-04-23 | 2018-04-23 | 59d |
| 273 | 1.6.4.3.2 | Entregable: Acta de Aprobación de Restricción a la Emisión de CdP (web services) | 1d? | 2018-04-23 | 2018-04-23 | 59d |
| 274 | 1.6.5 | **Restricción a la Emisión de CPE** | 1d? | 2018-04-23 | 2018-04-23 | 59d |
| 275 | 1.6.5.1 | **Planificación** | 1d? | 2018-04-23 | 2018-04-23 | 59d |
| 276 | 1.6.5.1.1 | Levantamiento de Requerimientos de Restricción a la Emisión de CPE | 1d? | 2018-04-23 | 2018-04-23 | 59d |
| 277 | 1.6.5.1.2 | Entregable: Documento de Requerimientos de Restricción a la Emisión de CPE | 1d? | 2018-04-23 | 2018-04-23 | 59d |
| 278 | 1.6.5.2 | **Ejecución** | 1d? | 2018-04-23 | 2018-04-23 | 59d |
| 279 | 1.6.5.2.1 | **Desarrollo** | 1d? | 2018-04-23 | 2018-04-23 | 59d |
| 280 | 1.6.5.2.1.1 | Desarrollar Restricción a la Emisión de CPE | 1d? | 2018-04-23 | 2018-04-23 | 59d |
| 281 | 1.6.5.2.1.2 | Entregable: Restricción a la Emisión de CPE-Desarrolado | 1d? | 2018-04-23 | 2018-04-23 | 59d |

| ID | WBS | Task | Duration | Start | Finish | Total slack |
| --- | --- | --- | --- | --- | --- | --- |
| 282 | 1.6.5.2.2 | **Control de Calidad** | 1d? | 2018-04-23 | 2018-04-23 | 59d |
| 283 | 1.6.5.2.2.1 | CC Restricción a la Emisión de CPE | 1d? | 2018-04-23 | 2018-04-23 | 59d |
| 284 | 1.6.5.2.2.2 | Entregable: Restricción a la Emisión de CPE-QA | 1d? | 2018-04-23 | 2018-04-23 | 59d |
| 285 | 1.6.5.2.3 | **Implantación** | 1d? | 2018-04-23 | 2018-04-23 | 59d |
| 286 | 1.6.5.2.3.1 | Implementar Restricción a la Emisión de CPE | 1d? | 2018-04-23 | 2018-04-23 | 59d |
| 287 | 1.6.5.2.3.2 | Entregable: Restricción a la Emisión de CPE- Implementado | 1d? | 2018-04-23 | 2018-04-23 | 59d |
| 288 | 1.6.5.3 | **Cierre** | 1d? | 2018-04-23 | 2018-04-23 | 59d |
| 289 | 1.6.5.3.1 | Realizar el Acta de Aprobación de Restricción a la Emisión de CPE | 1d? | 2018-04-23 | 2018-04-23 | 59d |
| 290 | 1.6.5.3.2 | Entregable: Acta de Aprobación de Restricción a la Emisión de CPE | 1d? | 2018-04-23 | 2018-04-23 | 59d |
| 291 | 1.6.6 | **Comprobante de contingencia al CPE** | 1d? | 2018-04-23 | 2018-04-23 | 59d |
| 292 | 1.6.6.1 | **Planificación** | 1d? | 2018-04-23 | 2018-04-23 | 59d |
| 293 | 1.6.6.1.1 | Levantamiento de Requerimientos de Comprobante de contingencia al CPE | 1d? | 2018-04-23 | 2018-04-23 | 59d |
| 294 | 1.6.6.1.2 | Entregable: Documento de Requerimientos de Comprobante de contingencia al CPE | 1d? | 2018-04-23 | 2018-04-23 | 59d |
| 295 | 1.6.6.2 | **Ejecución** | 1d? | 2018-04-23 | 2018-04-23 | 59d |
| 296 | 1.6.6.2.1 | **Desarrollo** | 1d? | 2018-04-23 | 2018-04-23 | 59d |
| 297 | 1.6.6.2.1.1 | Desarrollar Comprobante de contingencia al CPE | 1d? | 2018-04-23 | 2018-04-23 | 59d |
| 298 | 1.6.6.2.1.2 | Entregable: Comprobante de contingencia al CPE-Desarrolado | 1d? | 2018-04-23 | 2018-04-23 | 59d |
| 299 | 1.6.6.2.2 | **Control de Calidad** | 1d? | 2018-04-23 | 2018-04-23 | 59d |
| 300 | 1.6.6.2.2.1 | CC Comprobante de contingencia al CPE | 1d? | 2018-04-23 | 2018-04-23 | 59d |
| 301 | 1.6.6.2.2.2 | Entregable: Comprobante de contingencia al CPE-QA | 1d? | 2018-04-23 | 2018-04-23 | 59d |
| 302 | 1.6.6.2.3 | **Implantación** | 1d? | 2018-04-23 | 2018-04-23 | 59d |
| 303 | 1.6.6.2.3.1 | Implementar Comprobante de contingencia al CPE | 1d? | 2018-04-23 | 2018-04-23 | 59d |
| 304 | 1.6.6.2.3.2 | Entregable: Comprobante de contingencia al CPE- Implementado | 1d? | 2018-04-23 | 2018-04-23 | 59d |
| 305 | 1.6.6.3 | **Cierre** | 1d? | 2018-04-23 | 2018-04-23 | 59d |
| 306 | 1.6.6.3.1 | Realizar el Acta de Aprobación de Comprobante de contingencia al CPE | 1d? | 2018-04-23 | 2018-04-23 | 59d |
| 307 | 1.6.6.3.2 | Entregable: Acta de Aprobación de Comprobante de contingencia al CPE | 1d? | 2018-04-23 | 2018-04-23 | 59d |

| ID | WBS | Task | Duration | Start | Finish | Total slack |
| --- | --- | --- | --- | --- | --- | --- |
| 308 | 1.7 | **Control del registro de compras y ventas electrónico (RCVE)** | 1d? | 2018-04-23 | 2018-04-23 | 59d |
| 309 | 1.7.1 | **Campaña de omisos al RVCE** | 1d? | 2018-04-23 | 2018-04-23 | 59d |
| 310 | 1.7.1.1 | **Planificación** | 1d? | 2018-04-23 | 2018-04-23 | 59d |
| 311 | 1.7.1.1.1 | Levantamiento de Requerimientos de Campaña de Actualización celular | 1d? | 2018-04-23 | 2018-04-23 | 59d |
| 312 | 1.7.1.1.2 | Entregable: Documento de Requerimientos de Campaña de Actualización celular | 1d? | 2018-04-23 | 2018-04-23 | 59d |
| 313 | 1.7.1.2 | **Ejecución** | 1d? | 2018-04-23 | 2018-04-23 | 59d |
| 314 | 1.7.1.2.1 | **Desarrollo** | 1d? | 2018-04-23 | 2018-04-23 | 59d |
| 315 | 1.7.1.2.1.1 | Desarrollar Campaña de Actualización celular | 1d? | 2018-04-23 | 2018-04-23 | 59d |
| 316 | 1.7.1.2.1.2 | Entregable: Campaña de Actualización celular-Desarrolado | 1d? | 2018-04-23 | 2018-04-23 | 59d |
| 317 | 1.7.1.2.2 | **Control de Calidad** | 1d? | 2018-04-23 | 2018-04-23 | 59d |
| 318 | 1.7.1.2.2.1 | CC Campaña de Actualización celular | 1d? | 2018-04-23 | 2018-04-23 | 59d |
| 319 | 1.7.1.2.2.2 | Entregable: Campaña de Actualización celular-QA | 1d? | 2018-04-23 | 2018-04-23 | 59d |
| 320 | 1.7.1.2.3 | **Implantación** | 1d? | 2018-04-23 | 2018-04-23 | 59d |
| 321 | 1.7.1.2.3.1 | Implementar Campaña de Actualización celular | 1d? | 2018-04-23 | 2018-04-23 | 59d |
| 322 | 1.7.1.2.3.2 | Entregable: Campaña de Actualización celular- Implementado | 1d? | 2018-04-23 | 2018-04-23 | 59d |
| 323 | 1.7.1.3 | **Cierre** | 1d? | 2018-04-23 | 2018-04-23 | 59d |
| 324 | 1.7.1.3.1 | Realizar el Acta de Aprobación de Campaña de Actualización celular | 1d? | 2018-04-23 | 2018-04-23 | 59d |
| 325 | 1.7.1.3.2 | Entregable: Acta de Aprobación de Campaña de Actualización celular | 1d? | 2018-04-23 | 2018-04-23 | 59d |
| 326 | 1.7.2 | **Padrón de omisos a la presentación del RCVE** | 1d? | 2018-04-23 | 2018-04-23 | 59d |
| 327 | 1.7.2.1 | **Planificación** | 1d? | 2018-04-23 | 2018-04-23 | 59d |
| 328 | 1.7.2.1.1 | Levantamiento de Requerimientos de Padrón de omisos a la presentación del RCVE | 1d? | 2018-04-23 | 2018-04-23 | 59d |
| 329 | 1.7.2.1.2 | Entregable: Documento de Requerimientos de Padrón de omisos a la presentación del RCVE | 1d? | 2018-04-23 | 2018-04-23 | 59d |
| 330 | 1.7.2.2 | **Ejecución** | 1d? | 2018-04-23 | 2018-04-23 | 59d |
| 331 | 1.7.2.2.1 | **Desarrollo** | 1d? | 2018-04-23 | 2018-04-23 | 59d |
| 332 | 1.7.2.2.1.1 | Desarrollar Padrón de omisos a la presentación del RCVE | 1d? | 2018-04-23 | 2018-04-23 | 59d |
| 333 | 1.7.2.2.1.2 | Entregable: Padrón de omisos a la presentación del RCVE-Desarrolado | 1d? | 2018-04-23 | 2018-04-23 | 59d |

| ID | WBS | Task | Duration | Start | Finish | Total slack |
| --- | --- | --- | --- | --- | --- | --- |
| 334 | 1.7.2.2.2 | **Control de Calidad** | 1d? | 2018-04-23 | 2018-04-23 | 59d |
| 335 | 1.7.2.2.2.1 | CC Padrón de omisos a la presentación del RCVE | 1d? | 2018-04-23 | 2018-04-23 | 59d |
| 336 | 1.7.2.2.2.2 | Entregable: Padrón de omisos a la presentación del RCVE-QA | 1d? | 2018-04-23 | 2018-04-23 | 59d |
| 337 | 1.7.2.2.3 | **Implantación** | 1d? | 2018-04-23 | 2018-04-23 | 59d |
| 338 | 1.7.2.2.3.1 | Implementar Padrón de omisos a la presentación del RCVE | 1d? | 2018-04-23 | 2018-04-23 | 59d |
| 339 | 1.7.2.2.3.2 | Entregable: Padrón de omisos a la presentación del RCVE- Implementado | 1d? | 2018-04-23 | 2018-04-23 | 59d |
| 340 | 1.7.2.3 | **Cierre** | 1d? | 2018-04-23 | 2018-04-23 | 59d |
| 341 | 1.7.2.3.1 | Realizar el Acta de Aprobación de Padrón de omisos a la presentación del RCVE | 1d? | 2018-04-23 | 2018-04-23 | 59d |
| 342 | 1.7.2.3.2 | Entregable: Acta de Aprobación de Padrón de omisos a la presentación del RCVE | 1d? | 2018-04-23 | 2018-04-23 | 59d |
| 343 | 1.7.3 | **Control de omisos con padrón de RCVE** | 1d? | 2018-04-23 | 2018-04-23 | 59d |
| 344 | 1.7.3.1 | **Planificación** | 1d? | 2018-04-23 | 2018-04-23 | 59d |
| 345 | 1.7.3.1.1 | Levantamiento de Requerimientos de Control de omisos con padrón de RCVE | 1d? | 2018-04-23 | 2018-04-23 | 59d |
| 346 | 1.7.3.1.2 | Entregable: Documento de Requerimientos de Control de omisos con padrón de RCVE | 1d? | 2018-04-23 | 2018-04-23 | 59d |
| 347 | 1.7.3.2 | **Ejecución** | 1d? | 2018-04-23 | 2018-04-23 | 59d |
| 348 | 1.7.3.2.1 | **Desarrollo** | 1d? | 2018-04-23 | 2018-04-23 | 59d |
| 349 | 1.7.3.2.1.1 | Desarrollar Control de omisos con padrón de RCVE | 1d? | 2018-04-23 | 2018-04-23 | 59d |
| 350 | 1.7.3.2.1.2 | Entregable: Control de omisos con padrón de RCVE-Desarrolado | 1d? | 2018-04-23 | 2018-04-23 | 59d |
| 351 | 1.7.3.2.2 | **Control de Calidad** | 1d? | 2018-04-23 | 2018-04-23 | 59d |
| 352 | 1.7.3.2.2.1 | CC Control de omisos con padrón de RCVE | 1d? | 2018-04-23 | 2018-04-23 | 59d |
| 353 | 1.7.3.2.2.2 | Entregable: Control de omisos con padrón de RCVE-QA | 1d? | 2018-04-23 | 2018-04-23 | 59d |
| 354 | 1.7.3.2.3 | **Implantación** | 1d? | 2018-04-23 | 2018-04-23 | 59d |
| 355 | 1.7.3.2.3.1 | **Implementar Control de omisos con padrón de RCVE** | 1d? | 2018-04-23 | 2018-04-23 | 59d |
| 356 | 1.7.3.2.3.1.1 | Entregable: Control de omisos con padrón de RCVE- Implementado | 1d? | 2018-04-23 | 2018-04-23 | 59d |
| 357 | 1.7.3.3 | **Cierre** | 1d? | 2018-04-23 | 2018-04-23 | 59d |
| 358 | 1.7.3.3.1 | Realizar el Acta de Aprobación de Control de omisos con padrón de RCVE | 1d? | 2018-04-23 | 2018-04-23 | 59d |

| ID | WBS | Task | Duration | Start | Finish | Total slack |
| --- | --- | --- | --- | --- | --- | --- |
| 359 | 1.7.3.3.2 | **Entregable: Acta de Aprobación de Control de omisos con padrón de RCVE** | 1d? | 2018-04-23 | 2018-04-23 | 59d |
| 360 | 1.7.3.3.2.1 | Reemplazo de PDT por Declara Fácil con propuesta de DJ | 1d? | 2018-04-23 | 2018-04-23 | 59d |
| 361 | 1.7.3.3.2.2 | Reporte de consistencia del crédito presentado en el RCE con el Declara Fácil IGV Renta Mensual | 1d? | 2018-04-23 | 2018-04-23 | 59d |
| 362 | 1.7.3.3.2.3 | Determinación de omisos a la DJ del IGV Renta Mensual | 1d? | 2018-04-23 | 2018-04-23 | 59d |
| 363 | 1.7.3.3.2.4 | Actualización en línea de las presentaciones de DJ - MEPECO | 1d? | 2018-04-23 | 2018-04-23 | 59d |
| 364 | 1.7.3.3.2.5 | Determinación de omisos a la DDJJ IGV Renta Mensual - Comprobante Único | 1d? | 2018-04-23 | 2018-04-23 | 59d |
| 365 | 1.7.4 | **Control de Declaración IGV - Renta Mensual** | 1d? | 2018-04-23 | 2018-04-23 | 59d |
| 366 | 1.7.4.1 | **Reemplazo de PDT por Declara Fácil con propuesta de DJ** | 1d? | 2018-04-23 | 2018-04-23 | 59d |
| 367 | 1.7.4.1.1 | **Planificación** | 1d? | 2018-04-23 | 2018-04-23 | 59d |
| 368 | 1.7.4.1.1.1 | Levantamiento de Requerimientos de Reemplazo de PDT por Declara Fácil con propuesta de DJ | 1d? | 2018-04-23 | 2018-04-23 | 59d |
| 369 | 1.7.4.1.1.2 | Entregable: Documento de Requerimientos de Reemplazo de PDT por Declara Fácil con propuesta de DJ | 1d? | 2018-04-23 | 2018-04-23 | 59d |
| 370 | 1.7.4.1.2 | **Ejecución** | 1d? | 2018-04-23 | 2018-04-23 | 59d |
| 371 | 1.7.4.1.2.1 | **Desarrollo** | 1d? | 2018-04-23 | 2018-04-23 | 59d |
| 372 | 1.7.4.1.2.1.1 | Desarrollar Reemplazo de PDT por Declara Fácil con propuesta de DJ | 1d? | 2018-04-23 | 2018-04-23 | 59d |
| 373 | 1.7.4.1.2.1.2 | Entregable: Reemplazo de PDT por Declara Fácil con propuesta de DJ-Desarrolado | 1d? | 2018-04-23 | 2018-04-23 | 59d |
| 374 | 1.7.4.1.2.2 | **Control de Calidad** | 1d? | 2018-04-23 | 2018-04-23 | 59d |
| 375 | 1.7.4.1.2.2.1 | CC Reemplazo de PDT por Declara Fácil con propuesta de DJ | 1d? | 2018-04-23 | 2018-04-23 | 59d |
| 376 | 1.7.4.1.2.2.2 | Entregable: Reemplazo de PDT por Declara Fácil con propuesta de DJ-QA | 1d? | 2018-04-23 | 2018-04-23 | 59d |
| 377 | 1.7.4.1.2.3 | **Implantación** | 1d? | 2018-04-23 | 2018-04-23 | 59d |
| 378 | 1.7.4.1.2.3.1 | Implementar Reemplazo de PDT por Declara Fácil con propuesta de DJ | 1d? | 2018-04-23 | 2018-04-23 | 59d |
| 379 | 1.7.4.1.2.3.2 | Entregable: Reemplazo de PDT por Declara Fácil con propuesta de DJ- Implementado | 1d? | 2018-04-23 | 2018-04-23 | 59d |
| 380 | 1.7.4.1.3 | **Cierre** | 1d? | 2018-04-23 | 2018-04-23 | 59d |
| 381 | 1.7.4.1.3.1 | Realizar el Acta de Aprobación de Reemplazo de PDT por Declara Fácil con propuesta de DJ | 1d? | 2018-04-23 | 2018-04-23 | 59d |
| 382 | 1.7.4.1.3.2 | Entregable: Acta de Aprobación de Reemplazo de PDT por Declara Fácil con propuesta de DJ | 1d? | 2018-04-23 | 2018-04-23 | 59d |

| ID | WBS | Task | Duration | Start | Finish | Total slack |
| --- | --- | --- | --- | --- | --- | --- |
| 383 | 1.7.4.2 | **Reporte de consistencia del crédito presentado en el RCE con el Declara Fácil IGV Renta Mensual** | 1d? | 2018-04-23 | 2018-04-23 | 59d |
| 384 | 1.7.4.2.1 | **Planificación** | 1d? | 2018-04-23 | 2018-04-23 | 59d |
| 385 | 1.7.4.2.1.1 | Levantamiento de Requerimientos de Reporte de consistencia del crédito presentado en el RCE con el Declara Fácil IGV Renta Mensual | 1d? | 2018-04-23 | 2018-04-23 | 59d |
| 386 | 1.7.4.2.1.2 | Entregable: Documento de Requerimientos de Reporte de consistencia del crédito presentado en el RCE con el Declara Fácil IGV Renta Mensual | 1d? | 2018-04-23 | 2018-04-23 | 59d |
| 387 | 1.7.4.2.2 | **Ejecución** | 1d? | 2018-04-23 | 2018-04-23 | 59d |
| 388 | 1.7.4.2.2.1 | **Desarrollo** | 1d? | 2018-04-23 | 2018-04-23 | 59d |
| 389 | 1.7.4.2.2.1.1 | Desarrollar Reporte de consistencia del crédito presentado en el RCE con el Declara Fácil IGV Renta Mensual | 1d? | 2018-04-23 | 2018-04-23 | 59d |
| 390 | 1.7.4.2.2.1.2 | Entregable: Reporte de consistencia del crédito presentado en el RCE con el Declara Fácil IGV Renta Mensual-Desarrolado | 1d? | 2018-04-23 | 2018-04-23 | 59d |
| 391 | 1.7.4.2.2.2 | **Control de Calidad** | 1d? | 2018-04-23 | 2018-04-23 | 59d |
| 392 | 1.7.4.2.2.2.1 | CC Reporte de consistencia del crédito presentado en el RCE con el Declara Fácil IGV Renta Mensual | 1d? | 2018-04-23 | 2018-04-23 | 59d |
| 393 | 1.7.4.2.2.2.2 | Entregable: Reporte de consistencia del crédito presentado en el RCE con el Declara Fácil IGV Renta Mensual-QA | 1d? | 2018-04-23 | 2018-04-23 | 59d |
| 394 | 1.7.4.2.2.3 | **Implantación** | 1d? | 2018-04-23 | 2018-04-23 | 59d |
| 395 | 1.7.4.2.2.3.1 | Implementar Reporte de consistencia del crédito presentado en el RCE con el Declara Fácil IGV Renta Mensual | 1d? | 2018-04-23 | 2018-04-23 | 59d |
| 396 | 1.7.4.2.2.3.2 | Entregable: Reporte de consistencia del crédito presentado en el RCE con el Declara Fácil IGV Renta Mensual- Implementado | 1d? | 2018-04-23 | 2018-04-23 | 59d |
| 397 | 1.7.4.2.3 | **Cierre** | 1d? | 2018-04-23 | 2018-04-23 | 59d |
| 398 | 1.7.4.2.3.1 | Realizar el Acta de Aprobación de Reporte de consistencia del crédito presentado en el RCE con el Declara Fácil IGV Renta Mensual | 1d? | 2018-04-23 | 2018-04-23 | 59d |
| 399 | 1.7.4.2.3.2 | Entregable: Acta de Aprobación de Reporte de consistencia del crédito presentado en el RCE con el Declara Fácil IGV Renta Mensual | 1d? | 2018-04-23 | 2018-04-23 | 59d |
| 400 | 1.7.4.3 | **Determinación de omisos a la DJ del IGV Renta Mensual** | 1d? | 2018-04-23 | 2018-04-23 | 59d |
| 401 | 1.7.4.3.1 | **Planificación** | 1d? | 2018-04-23 | 2018-04-23 | 59d |
| 402 | 1.7.4.3.1.1 | Levantamiento de Requerimientos de Determinación de omisos a la DJ del IGV Renta Mensual | 1d? | 2018-04-23 | 2018-04-23 | 59d |
| 403 | 1.7.4.3.1.2 | Entregable: Documento de Requerimientos de Determinación de omisos a la DJ del IGV Renta Mensual | 1d? | 2018-04-23 | 2018-04-23 | 59d |
| 404 | 1.7.4.3.2 | **Ejecución** | 1d? | 2018-04-23 | 2018-04-23 | 59d |
| 405 | 1.7.4.3.2.1 | **Desarrollo** | 1d? | 2018-04-23 | 2018-04-23 | 59d |
| 406 | 1.7.4.3.2.1.1 | Desarrollar Determinación de omisos a la DJ del IGV Renta Mensual | 1d? | 2018-04-23 | 2018-04-23 | 59d |
| 407 | 1.7.4.3.2.1.2 | Entregable: Determinación de omisos a la DJ del IGV Renta Mensual-Desarrolado | 1d? | 2018-04-23 | 2018-04-23 | 59d |

| ID | WBS | Task | Duration | Start | Finish | Total slack |
| --- | --- | --- | --- | --- | --- | --- |
| 408 | 1.7.4.3.2.2 | **Control de Calidad** | 1d? | 2018-04-23 | 2018-04-23 | 59d |
| 409 | 1.7.4.3.2.2.1 | CC Determinación de omisos a la DJ del IGV Renta Mensual | 1d? | 2018-04-23 | 2018-04-23 | 59d |
| 410 | 1.7.4.3.2.2.2 | Entregable: Determinación de omisos a la DJ del IGV Renta Mensual-QA | 1d? | 2018-04-23 | 2018-04-23 | 59d |
| 411 | 1.7.4.3.2.3 | **Implantación** | 1d? | 2018-04-23 | 2018-04-23 | 59d |
| 412 | 1.7.4.3.2.3.1 | Implementar Determinación de omisos a la DJ del IGV Renta Mensual | 1d? | 2018-04-23 | 2018-04-23 | 59d |
| 413 | 1.7.4.3.2.3.2 | Entregable: Determinación de omisos a la DJ del IGV Renta Mensual- Implementado | 1d? | 2018-04-23 | 2018-04-23 | 59d |
| 414 | 1.7.4.3.3 | **Cierre** | 1d? | 2018-04-23 | 2018-04-23 | 59d |
| 415 | 1.7.4.3.3.1 | Realizar el Acta de Aprobación de Determinación de omisos a la DJ del IGV Renta Mensual | 1d? | 2018-04-23 | 2018-04-23 | 59d |
| 416 | 1.7.4.3.3.2 | Entregable: Acta de Aprobación de Determinación de omisos a la DJ del IGV Renta Mensual | 1d? | 2018-04-23 | 2018-04-23 | 59d |
| 417 | 1.7.4.4 | **Actualización en línea de las presentaciones de DJ - MEPECO** | 1d? | 2018-04-23 | 2018-04-23 | 59d |
| 418 | 1.7.4.4.1 | **Planificación** | 1d? | 2018-04-23 | 2018-04-23 | 59d |
| 419 | 1.7.4.4.1.1 | Levantamiento de Requerimientos de Actualización en línea de las presentaciones de DJ - MEPECO | 1d? | 2018-04-23 | 2018-04-23 | 59d |
| 420 | 1.7.4.4.1.2 | Entregable: Documento de Requerimientos de Actualización en línea de las presentaciones de DJ - MEPECO | 1d? | 2018-04-23 | 2018-04-23 | 59d |
| 421 | 1.7.4.4.2 | **Ejecución** | 1d? | 2018-04-23 | 2018-04-23 | 59d |
| 422 | 1.7.4.4.2.1 | **Desarrollo** | 1d? | 2018-04-23 | 2018-04-23 | 59d |
| 423 | 1.7.4.4.2.1.1 | Desarrollar Actualización en línea de las presentaciones de DJ - MEPECO | 1d? | 2018-04-23 | 2018-04-23 | 59d |
| 424 | 1.7.4.4.2.1.2 | Entregable: Actualización en línea de las presentaciones de DJ - MEPECO-Desarrolado | 1d? | 2018-04-23 | 2018-04-23 | 59d |
| 425 | 1.7.4.4.2.2 | **Control de Calidad** | 1d? | 2018-04-23 | 2018-04-23 | 59d |
| 426 | 1.7.4.4.2.2.1 | CC Actualización en línea de las presentaciones de DJ - MEPECO | 1d? | 2018-04-23 | 2018-04-23 | 59d |
| 427 | 1.7.4.4.2.2.2 | Entregable: Actualización en línea de las presentaciones de DJ - MEPECO-QA | 1d? | 2018-04-23 | 2018-04-23 | 59d |
| 428 | 1.7.4.4.2.3 | **Implantación** | 1d? | 2018-04-23 | 2018-04-23 | 59d |
| 429 | 1.7.4.4.2.3.1 | Implementar Actualización en línea de las presentaciones de DJ - MEPECO | 1d? | 2018-04-23 | 2018-04-23 | 59d |
| 430 | 1.7.4.4.2.3.2 | Entregable: Actualización en línea de las presentaciones de DJ - MEPECO- Implementado | 1d? | 2018-04-23 | 2018-04-23 | 59d |
| 431 | 1.7.4.4.3 | **Cierre** | 1d? | 2018-04-23 | 2018-04-23 | 59d |
| 432 | 1.7.4.4.3.1 | Realizar el Acta de Aprobación de Actualización en línea de las presentaciones de DJ - MEPECO | 1d? | 2018-04-23 | 2018-04-23 | 59d |
| 433 | 1.7.4.4.3.2 | Entregable: Acta de Aprobación de Actualización en línea de las presentaciones de DJ - MEPECO | 1d? | 2018-04-23 | 2018-04-23 | 59d |

| ID | WBS | Task | Duration | Start | Finish | Total slack |
| --- | --- | --- | --- | --- | --- | --- |
| 434 | 1.7.4.5 | **Determinación de omisos a la DDJJ IGV Renta Mensual - Comprobante Único** | 1d? | 2018-04-23 | 2018-04-23 | 59d |
| 435 | 1.7.4.5.1 | **Planificación** | 1d? | 2018-04-23 | 2018-04-23 | 59d |
| 436 | 1.7.4.5.1.1 | Levantamiento de Requerimientos de Determinación de omisos a la DDJJ IGV Renta Mensual - Comprobante Único | 1d? | 2018-04-23 | 2018-04-23 | 59d |
| 437 | 1.7.4.5.1.2 | Entregable: Determinación de omisos a la DDJJ IGV Renta Mensual - Comprobante Único | 1d? | 2018-04-23 | 2018-04-23 | 59d |
| 438 | 1.7.4.5.2 | **Ejecución** | 1d? | 2018-04-23 | 2018-04-23 | 59d |
| 439 | 1.7.4.5.2.1 | **Desarrollo** | 1d? | 2018-04-23 | 2018-04-23 | 59d |
| 440 | 1.7.4.5.2.1.1 | Desarrollar Determinación de omisos a la DDJJ IGV Renta Mensual - Comprobante Único | 1d? | 2018-04-23 | 2018-04-23 | 59d |
| 441 | 1.7.4.5.2.1.2 | Entregable: Determinación de omisos a la DDJJ IGV Renta Mensual - Comprobante Único-Desarrolado | 1d? | 2018-04-23 | 2018-04-23 | 59d |
| 442 | 1.7.4.5.2.2 | **Control de Calidad** | 1d? | 2018-04-23 | 2018-04-23 | 59d |
| 443 | 1.7.4.5.2.2.1 | CC Determinación de omisos a la DDJJ IGV Renta Mensual - Comprobante Único | 1d? | 2018-04-23 | 2018-04-23 | 59d |
| 444 | 1.7.4.5.2.2.2 | Entregable: Determinación de omisos a la DDJJ IGV Renta Mensual - Comprobante Único-QA | 1d? | 2018-04-23 | 2018-04-23 | 59d |
| 445 | 1.7.4.5.2.3 | **Implantación** | 1d? | 2018-04-23 | 2018-04-23 | 59d |
| 446 | 1.7.4.5.2.3.1 | Implementar Determinación de omisos a la DDJJ IGV Renta Mensual - Comprobante Único | 1d? | 2018-04-23 | 2018-04-23 | 59d |
| 447 | 1.7.4.5.2.3.2 | Entregable: Determinación de omisos a la DDJJ IGV Renta Mensual - Comprobante Único- Implementado | 1d? | 2018-04-23 | 2018-04-23 | 59d |
| 448 | 1.7.4.5.3 | **Cierre** | 1d? | 2018-04-23 | 2018-04-23 | 59d |
| 449 | 1.7.4.5.3.1 | Realizar el Acta de Aprobación de Determinación de omisos a la DDJJ IGV Renta Mensual - Comprobante Único | 1d? | 2018-04-23 | 2018-04-23 | 59d |
| 450 | 1.7.4.5.3.2 | Entregable: Acta de Aprobación de Determinación de omisos a la DDJJ IGV Renta Mensual - Comprobante Único | 1d? | 2018-04-23 | 2018-04-23 | 59d |
| 451 | 1.7.4.6 | **Fiscalización: Gestión Masiva de Inconsistencias** | 1d? | 2018-04-23 | 2018-04-23 | 59d |
| 452 | 1.7.4.6.1 | **Programa de Gestión Masiva de Inconsistencias** | 1d? | 2018-04-23 | 2018-04-23 | 59d |
| 453 | 1.7.4.6.1.1 | **Planificación** | 1d? | 2018-04-23 | 2018-04-23 | 59d |
| 454 | 1.7.4.6.1.1.1 | Levantamiento de Requerimientos de Programa de Gestión Masiva de Inconsistencias | 1d? | 2018-04-23 | 2018-04-23 | 59d |
| 455 | 1.7.4.6.1.1.2 | Entregable: Documento de Requerimientos de Programa de Gestión Masiva de Inconsistencias | 1d? | 2018-04-23 | 2018-04-23 | 59d |
| 456 | 1.7.4.6.1.2 | **Ejecución** | 1d? | 2018-04-23 | 2018-04-23 | 59d |
| 457 | 1.7.4.6.1.2.1 | **Desarrollo** | 1d? | 2018-04-23 | 2018-04-23 | 59d |
| 458 | 1.7.4.6.1.2.1.1 | Desarrollar Programa de Gestión Masiva de Inconsistencias | 1d? | 2018-04-23 | 2018-04-23 | 59d |
| 459 | 1.7.4.6.1.2.1.2 | Entregable: Programa de Gestión Masiva de Inconsistencias-Desarrolado | 1d? | 2018-04-23 | 2018-04-23 | 59d |

| ID | WBS | Task | Duration | Start | Finish | Total slack |
| --- | --- | --- | --- | --- | --- | --- |
| 460 | 1.7.4.6.1.2.2 | **Control de Calidad** | 1d? | 2018-04-23 | 2018-04-23 | 59d |
| 461 | 1.7.4.6.1.2.2.1 | CC Programa de Gestión Masiva de Inconsistencias | 1d? | 2018-04-23 | 2018-04-23 | 59d |
| 462 | 1.7.4.6.1.2.2.2 | Entregable: Programa de Gestión Masiva de Inconsistencias-QA | 1d? | 2018-04-23 | 2018-04-23 | 59d |
| 463 | 1.7.4.6.1.2.3 | **Implantación** | 1d? | 2018-04-23 | 2018-04-23 | 59d |
| 464 | 1.7.4.6.1.2.3.1 | Implementar Programa de Gestión Masiva de Inconsistencias | 1d? | 2018-04-23 | 2018-04-23 | 59d |
| 465 | 1.7.4.6.1.2.3.2 | Entregable: Programa de Gestión Masiva de Inconsistencias- Implementado | 1d? | 2018-04-23 | 2018-04-23 | 59d |
| 466 | 1.7.4.6.1.3 | **Cierre** | 1d? | 2018-04-23 | 2018-04-23 | 59d |
| 467 | 1.7.4.6.1.3.1 | Realizar el Acta de Aprobación de Programa de Gestión Masiva de Inconsistencias | 1d? | 2018-04-23 | 2018-04-23 | 59d |
| 468 | 1.7.4.6.1.3.2 | Entregable: Acta de Aprobación de Programa de Gestión Masiva de Inconsistencias | 1d? | 2018-04-23 | 2018-04-23 | 59d |
| 469 | 1.7.4.6.2 | **Nuevo CCV que integra el Gema WEB** | 1d? | 2018-04-23 | 2018-04-23 | 59d |
| 470 | 1.7.4.6.2.1 | **Planificación** | 1d? | 2018-04-23 | 2018-04-23 | 59d |
| 471 | 1.7.4.6.2.1.1 | Levantamiento de Requerimientos de Nuevo CCV que integra el Gema WEB | 1d? | 2018-04-23 | 2018-04-23 | 59d |
| 472 | 1.7.4.6.2.1.2 | Entregable: Documento de Requerimientos de Nuevo CCV que integra el Gema WEB | 1d? | 2018-04-23 | 2018-04-23 | 59d |
| 473 | 1.7.4.6.2.2 | **Ejecución** | 1d? | 2018-04-23 | 2018-04-23 | 59d |
| 474 | 1.7.4.6.2.2.1 | **Desarrollo** | 1d? | 2018-04-23 | 2018-04-23 | 59d |
| 475 | 1.7.4.6.2.2.1.1 | Desarrollar Nuevo CCV que integra el Gema WEB | 1d? | 2018-04-23 | 2018-04-23 | 59d |
| 476 | 1.7.4.6.2.2.1.2 | Entregable: Nuevo CCV que integra el Gema WEB-Desarrolado | 1d? | 2018-04-23 | 2018-04-23 | 59d |
| 477 | 1.7.4.6.2.2.2 | **Control de Calidad** | 1d? | 2018-04-23 | 2018-04-23 | 59d |
| 478 | 1.7.4.6.2.2.2.1 | CC Nuevo CCV que integra el Gema WEB | 1d? | 2018-04-23 | 2018-04-23 | 59d |
| 479 | 1.7.4.6.2.2.2.2 | Entregable: Nuevo CCV que integra el Gema WEB-QA | 1d? | 2018-04-23 | 2018-04-23 | 59d |
| 480 | 1.7.4.6.2.2.3 | **Implantación** | 1d? | 2018-04-23 | 2018-04-23 | 59d |
| 481 | 1.7.4.6.2.2.3.1 | Implementar Nuevo CCV que integra el Gema WEB | 1d? | 2018-04-23 | 2018-04-23 | 59d |
| 482 | 1.7.4.6.2.2.3.2 | Entregable: Nuevo CCV que integra el Gema WEB- Implementado | 1d? | 2018-04-23 | 2018-04-23 | 59d |
| 483 | 1.7.4.6.2.3 | **Cierre** | 1d? | 2018-04-23 | 2018-04-23 | 59d |
| 484 | 1.7.4.6.2.3.1 | Realizar el Acta de Aprobación de Nuevo CCV que integra el Gema WEB | 1d? | 2018-04-23 | 2018-04-23 | 59d |
| 485 | 1.7.4.6.2.3.2 | Entregable: Acta de Aprobación de Nuevo CCV que integra el Gema WEB | 1d? | 2018-04-23 | 2018-04-23 | 59d |

| ID | WBS | Task | Duration | Start | Finish | Total slack |
| --- | --- | --- | --- | --- | --- | --- |
| 486 | 1.7.4.6.3 | **Utilización del CRM como soporte a las campañas de gestión inductiva** | 1d? | 2018-04-23 | 2018-04-23 | 59d |
| 487 | 1.7.4.6.3.1 | **Planificación** | 1d? | 2018-04-23 | 2018-04-23 | 59d |
| 488 | 1.7.4.6.3.1.1 | Levantamiento de Requerimientos de Utilización del CRM como soporte a las campañas de gestión inductiva | 1d? | 2018-04-23 | 2018-04-23 | 59d |
| 489 | 1.7.4.6.3.1.2 | Entregable: Documento de Requerimientos de Utilización del CRM como soporte a las campañas de gestión inductiva | 1d? | 2018-04-23 | 2018-04-23 | 59d |
| 490 | 1.7.4.6.3.2 | **Ejecución** | 1d? | 2018-04-23 | 2018-04-23 | 59d |
| 491 | 1.7.4.6.3.2.1 | **Desarrollo** | 1d? | 2018-04-23 | 2018-04-23 | 59d |
| 492 | 1.7.4.6.3.2.1.1 | Desarrollar Utilización del CRM como soporte a las campañas de gestión inductiva | 1d? | 2018-04-23 | 2018-04-23 | 59d |
| 493 | 1.7.4.6.3.2.1.2 | Entregable: Utilización del CRM como soporte a las campañas de gestión inductiva-Desarrolado | 1d? | 2018-04-23 | 2018-04-23 | 59d |
| 494 | 1.7.4.6.3.2.2 | **Control de Calidad** | 1d? | 2018-04-23 | 2018-04-23 | 59d |
| 495 | 1.7.4.6.3.2.2.1 | Verificar Utilización del CRM como soporte a las campañas de gestión inductiva | 1d? | 2018-04-23 | 2018-04-23 | 59d |
| 496 | 1.7.4.6.3.2.2.2 | Entregable: Utilización del CRM como soporte a las campañas de gestión inductiva-QA | 1d? | 2018-04-23 | 2018-04-23 | 59d |
| 497 | 1.7.4.6.3.2.3 | **Implantación** | 1d? | 2018-04-23 | 2018-04-23 | 59d |
| 498 | 1.7.4.6.3.2.3.1 | Implementar Utilización del CRM como soporte a las campañas de gestión inductiva | 1d? | 2018-04-23 | 2018-04-23 | 59d |
| 499 | 1.7.4.6.3.2.3.2 | Entregable: Utilización del CRM como soporte a las campañas de gestión inductiva- Implementado | 1d? | 2018-04-23 | 2018-04-23 | 59d |
| 500 | 1.7.4.6.3.3 | **Cierre** | 1d? | 2018-04-23 | 2018-04-23 | 59d |
| 501 | 1.7.4.6.3.3.1 | Realizar el Acta de Aprobación de Utilización del CRM como soporte a las campañas de gestión inductiva | 1d? | 2018-04-23 | 2018-04-23 | 59d |
| 502 | 1.7.4.6.3.3.2 | Entregable: Acta de Aprobación de Utilización del CRM como soporte a las campañas de gestión inductiva | 1d? | 2018-04-23 | 2018-04-23 | 59d |
| 503 | 1.7.4.6.4 | **SINE para las carta inductivas y esquelas** | 1d? | 2018-04-23 | 2018-04-23 | 59d |
| 504 | 1.7.4.6.4.1 | **Planificación** | 1d? | 2018-04-23 | 2018-04-23 | 59d |
| 505 | 1.7.4.6.4.1.1 | Levantamiento de Requerimientos de SINE para las carta inductivas y esquelas | 1d? | 2018-04-23 | 2018-04-23 | 59d |
| 506 | 1.7.4.6.4.1.2 | Entregable: Documento de Requerimientos de SINE para las carta inductivas y esquelas | 1d? | 2018-04-23 | 2018-04-23 | 59d |
| 507 | 1.7.4.6.4.2 | **Ejecución** | 1d? | 2018-04-23 | 2018-04-23 | 59d |
| 508 | 1.7.4.6.4.2.1 | **Desarrollo** | 1d? | 2018-04-23 | 2018-04-23 | 59d |
| 509 | 1.7.4.6.4.2.1.1 | Desarrollar SINE para las carta inductivas y esquelas | 1d? | 2018-04-23 | 2018-04-23 | 59d |
| 510 | 1.7.4.6.4.2.1.2 | Entregable: SINE para las carta inductivas y esquelas-Desarrolado | 1d? | 2018-04-23 | 2018-04-23 | 59d |

| ID | WBS | Task | Duration | Start | Finish | Total slack |
| --- | --- | --- | --- | --- | --- | --- |
| 511 | 1.7.4.6.4.2.2 | **Control de Calidad** | 1d? | 2018-04-23 | 2018-04-23 | 59d |
| 512 | 1.7.4.6.4.2.2.1 | Verificar SINE para las carta inductivas y esquelas | 1d? | 2018-04-23 | 2018-04-23 | 59d |
| 513 | 1.7.4.6.4.2.2.2 | Entregable: SINE para las carta inductivas y esquelas-QA | 1d? | 2018-04-23 | 2018-04-23 | 59d |
| 514 | 1.7.4.6.4.2.3 | **Implantación** | 1d? | 2018-04-23 | 2018-04-23 | 59d |
| 515 | 1.7.4.6.4.2.3.1 | Implementar SINE para las carta inductivas y esquelas | 1d? | 2018-04-23 | 2018-04-23 | 59d |
| 516 | 1.7.4.6.4.2.3.2 | Entregable: SINE para las carta inductivas y esquelas- Implementado | 1d? | 2018-04-23 | 2018-04-23 | 59d |
| 517 | 1.7.4.6.4.3 | **Cierre** | 1d? | 2018-04-23 | 2018-04-23 | 59d |
| 518 | 1.7.4.6.4.3.1 | Realizar el Acta de Aprobación de SINE para las carta inductivas y esquelas | 1d? | 2018-04-23 | 2018-04-23 | 59d |
| 519 | 1.7.4.6.4.3.2 | Entregable: Acta de Aprobación de SINE para las carta inductivas y esquelas | 1d? | 2018-04-23 | 2018-04-23 | 59d |
| 520 | 1.7.4.6.5 | **SIEV para la gestión inductiva** | 1d? | 2018-04-23 | 2018-04-23 | 59d |
| 521 | 1.7.4.6.5.1 | **Planificación** | 1d? | 2018-04-23 | 2018-04-23 | 59d |
| 522 | 1.7.4.6.5.1.1 | Levantamiento de Requerimientos de SIEV para la gestión inductiva | 1d? | 2018-04-23 | 2018-04-23 | 59d |
| 523 | 1.7.4.6.5.1.2 | Entregable: Documento de Requerimientos de SIEV para la gestión inductiva | 1d? | 2018-04-23 | 2018-04-23 | 59d |
| 524 | 1.7.4.6.5.2 | **Ejecución** | 1d? | 2018-04-23 | 2018-04-23 | 59d |
| 525 | 1.7.4.6.5.2.1 | **Desarrollo** | 1d? | 2018-04-23 | 2018-04-23 | 59d |
| 526 | 1.7.4.6.5.2.1.1 | Desarrollar SIEV para la gestión inductiva | 1d? | 2018-04-23 | 2018-04-23 | 59d |
| 527 | 1.7.4.6.5.2.1.2 | Entregable: SIEV para la gestión inductiva-Desarrolado | 1d? | 2018-04-23 | 2018-04-23 | 59d |
| 528 | 1.7.4.6.5.2.2 | **Control de Calidad** | 1d? | 2018-04-23 | 2018-04-23 | 59d |
| 529 | 1.7.4.6.5.2.2.1 | Verificar SIEV para la gestión inductiva | 1d? | 2018-04-23 | 2018-04-23 | 59d |
| 530 | 1.7.4.6.5.2.2.2 | Entregable: SIEV para la gestión inductiva-QA | 1d? | 2018-04-23 | 2018-04-23 | 59d |
| 531 | 1.7.4.6.5.2.3 | **Implantación** | 1d? | 2018-04-23 | 2018-04-23 | 59d |
| 532 | 1.7.4.6.5.2.3.1 | Implementar SIEV para la gestión inductiva | 1d? | 2018-04-23 | 2018-04-23 | 59d |
| 533 | 1.7.4.6.5.2.3.2 | Entregable: SIEV para la gestión inductiva- Implementado | 1d? | 2018-04-23 | 2018-04-23 | 59d |
| 534 | 1.7.4.6.5.3 | **Cierre** | 1d? | 2018-04-23 | 2018-04-23 | 59d |
| 535 | 1.7.4.6.5.3.1 | Realizar el Acta de Aprobación de SIEV para la gestión inductiva | 1d? | 2018-04-23 | 2018-04-23 | 59d |
| 536 | 1.7.4.6.5.3.2 | Entregable: Acta de Aprobación de SIEV para la gestión inductiva | 1d? | 2018-04-23 | 2018-04-23 | 59d |

| ID | WBS | Task | Duration | Start | Finish | Total slack |
| --- | --- | --- | --- | --- | --- | --- |
| 537 | 1.7.4.6.6 | **Seleccionar contribuyentes para el Control del IGV** | 1d? | 2018-04-23 | 2018-04-23 | 59d |
| 538 | 1.7.4.6.6.1 | **Planificación** | 1d? | 2018-04-23 | 2018-04-23 | 59d |
| 539 | 1.7.4.6.6.1.1 | Levantamiento de Requerimientos de Seleccionar contribuyentes para el Control del IGV | 1d? | 2018-04-23 | 2018-04-23 | 59d |
| 540 | 1.7.4.6.6.1.2 | Entregable: Documento de Requerimientos de Seleccionar contribuyentes para el Control del IGV | 1d? | 2018-04-23 | 2018-04-23 | 59d |
| 541 | 1.7.4.6.6.2 | **Ejecución** | 1d? | 2018-04-23 | 2018-04-23 | 59d |
| 542 | 1.7.4.6.6.2.1 | **Desarrollo** | 1d? | 2018-04-23 | 2018-04-23 | 59d |
| 543 | 1.7.4.6.6.2.1.1 | Desarrollar Seleccionar contribuyentes para el Control del IGV | 1d? | 2018-04-23 | 2018-04-23 | 59d |
| 544 | 1.7.4.6.6.2.1.2 | Entregable: Seleccionar contribuyentes para el Control del IGV-Desarrolado | 1d? | 2018-04-23 | 2018-04-23 | 59d |
| 545 | 1.7.4.6.6.2.2 | **Control de Calidad** | 1d? | 2018-04-23 | 2018-04-23 | 59d |
| 546 | 1.7.4.6.6.2.2.1 | Realizar Pruebas de Seleccionar contribuyentes para el Control del IGV | 1d? | 2018-04-23 | 2018-04-23 | 59d |
| 547 | 1.7.4.6.6.2.2.2 | Entregable: Seleccionar contribuyentes para el Control del IGV-QA | 1d? | 2018-04-23 | 2018-04-23 | 59d |
| 548 | 1.7.4.6.6.2.3 | **Implantación** | 1d? | 2018-04-23 | 2018-04-23 | 59d |
| 549 | 1.7.4.6.6.2.3.1 | Implementar Seleccionar contribuyentes para el Control del IGV | 1d? | 2018-04-23 | 2018-04-23 | 59d |
| 550 | 1.7.4.6.6.2.3.2 | Entregable: Seleccionar contribuyentes para el Control del IGV- Implementado | 1d? | 2018-04-23 | 2018-04-23 | 59d |
| 551 | 1.7.4.6.6.3 | **Cierre** | 1d? | 2018-04-23 | 2018-04-23 | 59d |
| 552 | 1.7.4.6.6.3.1 | Realizar el Acta de Aprobación de Seleccionar contribuyentes para el Control del IGV | 1d? | 2018-04-23 | 2018-04-23 | 59d |
| 553 | 1.7.4.6.6.3.2 | Entregable: Acta de Aprobación de Seleccionar contribuyentes para el Control del IGV | 1d? | 2018-04-23 | 2018-04-23 | 59d |
| 554 | 1.7.4.6.7 | **Seleccionar contribuyentes para el Control del incremento patrimonial no justificado** | 1d? | 2018-04-23 | 2018-04-23 | 59d |
| 555 | 1.7.4.6.7.1 | **Planificación** | 1d? | 2018-04-23 | 2018-04-23 | 59d |
| 556 | 1.7.4.6.7.1.1 | Levantamiento de Requerimientos de Seleccionar contribuyentes para el Control del incremento patrimonial no justificado | 1d? | 2018-04-23 | 2018-04-23 | 59d |
| 557 | 1.7.4.6.7.1.2 | Entregable: Documento de Requerimientos de Seleccionar contribuyentes para el Control del incremento patrimonial no justificado | 1d? | 2018-04-23 | 2018-04-23 | 59d |
| 558 | 1.7.4.6.7.2 | **Ejecución** | 1d? | 2018-04-23 | 2018-04-23 | 59d |
| 559 | 1.7.4.6.7.2.1 | **Desarrollo** | 1d? | 2018-04-23 | 2018-04-23 | 59d |
| 560 | 1.7.4.6.7.2.1.1 | Desarrollar Seleccionar contribuyentes para el Control del incremento patrimonial no justificado | 1d? | 2018-04-23 | 2018-04-23 | 59d |
| 561 | 1.7.4.6.7.2.1.2 | Entregable: Seleccionar contribuyentes para el Control del incremento patrimonial no justificado-Desarrolado | 1d? | 2018-04-23 | 2018-04-23 | 59d |

| ID | WBS | Task | Duration | Start | Finish | Total slack |
| --- | --- | --- | --- | --- | --- | --- |
| 562 | 1.7.4.6.7.2.2 | **Control de Calidad** | 1d? | 2018-04-23 | 2018-04-23 | 59d |
| 563 | 1.7.4.6.7.2.2.1 | Realizar pruebas de Seleccionar contribuyentes para el Control del incremento patrimonial no justificado | 1d? | 2018-04-23 | 2018-04-23 | 59d |
| 564 | 1.7.4.6.7.2.2.2 | Entregable: Seleccionar contribuyentes para el Control del incremento patrimonial no justificado-QA | 1d? | 2018-04-23 | 2018-04-23 | 59d |
| 565 | 1.7.4.6.7.2.3 | **Implantación** | 1d? | 2018-04-23 | 2018-04-23 | 59d |
| 566 | 1.7.4.6.7.2.3.1 | Implementar Seleccionar contribuyentes para el Control del incremento patrimonial no justificado | 1d? | 2018-04-23 | 2018-04-23 | 59d |
| 567 | 1.7.4.6.7.2.3.2 | Entregable: Seleccionar contribuyentes para el Control del incremento patrimonial no justificado- Implementado | 1d? | 2018-04-23 | 2018-04-23 | 59d |
| 568 | 1.7.4.6.7.3 | **Cierre** | 1d? | 2018-04-23 | 2018-04-23 | 59d |
| 569 | 1.7.4.6.7.3.1 | Realizar el Acta de Aprobación de Seleccionar contribuyentes para el Control del incremento patrimonial no justificado | 1d? | 2018-04-23 | 2018-04-23 | 59d |
| 570 | 1.7.4.6.7.3.2 | Entregable: Acta de Aprobación de Seleccionar contribuyentes para el Control del incremento patrimonial no justificado | 1d? | 2018-04-23 | 2018-04-23 | 59d |
| 571 | 1.7.4.6.8 | **Perfil para seleccionar Accion masiva** | 1d? | 2018-04-23 | 2018-04-23 | 59d |
| 572 | 1.7.4.6.8.1 | **Planificación** | 1d? | 2018-04-23 | 2018-04-23 | 59d |
| 573 | 1.7.4.6.8.1.1 | Levantamiento de Requerimientos de Perfil para seleccionar Accion masiva | 1d? | 2018-04-23 | 2018-04-23 | 59d |
| 574 | 1.7.4.6.8.1.2 | Entregable: Documento de Requerimientos de Perfil para seleccionar Accion masiva | 1d? | 2018-04-23 | 2018-04-23 | 59d |
| 575 | 1.7.4.6.8.2 | **Ejecución** | 1d? | 2018-04-23 | 2018-04-23 | 59d |
| 576 | 1.7.4.6.8.2.1 | **Desarrollo** | 1d? | 2018-04-23 | 2018-04-23 | 59d |
| 577 | 1.7.4.6.8.2.1.1 | Desarrollar Perfil para seleccionar Accion masiva | 1d? | 2018-04-23 | 2018-04-23 | 59d |
| 578 | 1.7.4.6.8.2.1.2 | Entregable: Perfil para seleccionar Accion masiva-Desarrolado | 1d? | 2018-04-23 | 2018-04-23 | 59d |
| 579 | 1.7.4.6.8.2.2 | **Control de Calidad** | 1d? | 2018-04-23 | 2018-04-23 | 59d |
| 580 | 1.7.4.6.8.2.2.1 | Realizar pruebas de Perfil para seleccionar Accion masiva | 1d? | 2018-04-23 | 2018-04-23 | 59d |
| 581 | 1.7.4.6.8.2.2.2 | Entregable: Perfil para seleccionar Accion masiva-QA | 1d? | 2018-04-23 | 2018-04-23 | 59d |
| 582 | 1.7.4.6.8.2.3 | **Implantación** | 1d? | 2018-04-23 | 2018-04-23 | 59d |
| 583 | 1.7.4.6.8.2.3.1 | Implementar Perfil para seleccionar Accion masiva | 1d? | 2018-04-23 | 2018-04-23 | 59d |
| 584 | 1.7.4.6.8.2.3.2 | Entregable: Perfil para seleccionar Accion masiva- Implementado | 1d? | 2018-04-23 | 2018-04-23 | 59d |
| 585 | 1.7.4.6.8.3 | **Cierre** | 1d? | 2018-04-23 | 2018-04-23 | 59d |
| 586 | 1.7.4.6.8.3.1 | Realizar el Acta de Aprobación de Perfil para seleccionar Accion masiva | 1d? | 2018-04-23 | 2018-04-23 | 59d |
| 587 | 1.7.4.6.8.3.2 | Entregable: Acta de Aprobación de Perfil para seleccionar Accion masiva | 1d? | 2018-04-23 | 2018-04-23 | 59d |

| ID | WBS | Task | Duration | Start | Finish | Total slack |
| --- | --- | --- | --- | --- | --- | --- |
| 588 | 1.7.4.7 | **Fiscalización Parcial Electrónica del IGV** | 1d? | 2018-04-23 | 2018-04-23 | 59d |
| 589 | 1.7.4.7.1 | **Piloto de fiscalización parcial electrónica de comprobantes duplicados** | 1d? | 2018-04-23 | 2018-04-23 | 59d |
| 590 | 1.7.4.7.1.1 | **Planificación** | 1d? | 2018-04-23 | 2018-04-23 | 59d |
| 591 | 1.7.4.7.1.1.1 | Levantamiento de Requerimientos de Piloto de fiscalización parcial electrónica de comprobantes duplicados | 1d? | 2018-04-23 | 2018-04-23 | 59d |
| 592 | 1.7.4.7.1.1.2 | Entregable: Documento de Requerimientos de Piloto de fiscalización parcial electrónica de comprobantes duplicados | 1d? | 2018-04-23 | 2018-04-23 | 59d |
| 593 | 1.7.4.7.1.2 | **Ejecución** | 1d? | 2018-04-23 | 2018-04-23 | 59d |
| 594 | 1.7.4.7.1.2.1 | **Desarrollo** | 1d? | 2018-04-23 | 2018-04-23 | 59d |
| 595 | 1.7.4.7.1.2.1.1 | Desarrollar Piloto de fiscalización parcial electrónica de comprobantes duplicados | 1d? | 2018-04-23 | 2018-04-23 | 59d |
| 596 | 1.7.4.7.1.2.1.2 | Entregable: Piloto de fiscalización parcial electrónica de comprobantes duplicados-Desarrolado | 1d? | 2018-04-23 | 2018-04-23 | 59d |
| 597 | 1.7.4.7.1.2.2 | **Control de Calidad** | 1d? | 2018-04-23 | 2018-04-23 | 59d |
| 598 | 1.7.4.7.1.2.2.1 | Realizar pruebas de Piloto de fiscalización parcial electrónica de comprobantes duplicados | 1d? | 2018-04-23 | 2018-04-23 | 59d |
| 599 | 1.7.4.7.1.2.2.2 | Entregable: Piloto de fiscalización parcial electrónica de comprobantes duplicados-QA | 1d? | 2018-04-23 | 2018-04-23 | 59d |
| 600 | 1.7.4.7.1.2.3 | **Implantación** | 1d? | 2018-04-23 | 2018-04-23 | 59d |
| 601 | 1.7.4.7.1.2.3.1 | Implementar Piloto de fiscalización parcial electrónica de comprobantes duplicados | 1d? | 2018-04-23 | 2018-04-23 | 59d |
| 602 | 1.7.4.7.1.2.3.2 | Entregable: Piloto de fiscalización parcial electrónica de comprobantes duplicados- Implementado | 1d? | 2018-04-23 | 2018-04-23 | 59d |
| 603 | 1.7.4.7.1.3 | **Cierre** | 1d? | 2018-04-23 | 2018-04-23 | 59d |
| 604 | 1.7.4.7.1.3.1 | Realizar el Acta de Aprobación de Piloto de fiscalización parcial electrónica de comprobantes duplicados | 1d? | 2018-04-23 | 2018-04-23 | 59d |
| 605 | 1.7.4.7.1.3.2 | Entregable: Acta de Aprobación de Piloto de fiscalización parcial electrónica de comprobantes duplicados | 1d? | 2018-04-23 | 2018-04-23 | 59d |
| 606 | 1.7.4.7.2 | **Fiscalización parcial electrónica de diferencias entre RCVE y DJ de IGV** | 1d? | 2018-04-23 | 2018-04-23 | 59d |
| 607 | 1.7.4.7.2.1 | **Planificación** | 1d? | 2018-04-23 | 2018-04-23 | 59d |
| 608 | 1.7.4.7.2.1.1 | Levantamiento de Requerimientos de Fiscalización parcial electrónica de diferencias entre RCVE y DJ de IGV | 1d? | 2018-04-23 | 2018-04-23 | 59d |
| 609 | 1.7.4.7.2.1.2 | Entregable: Documento de Requerimientos de Fiscalización parcial electrónica de diferencias entre RCVE y DJ de IGV | 1d? | 2018-04-23 | 2018-04-23 | 59d |
| 610 | 1.7.4.7.2.2 | **Ejecución** | 1d? | 2018-04-23 | 2018-04-23 | 59d |
| 611 | 1.7.4.7.2.2.1 | **Desarrollo** | 1d? | 2018-04-23 | 2018-04-23 | 59d |
| 612 | 1.7.4.7.2.2.1.1 | Desarrollar Fiscalización parcial electrónica de diferencias entre RCVE y DJ de IGV | 1d? | 2018-04-23 | 2018-04-23 | 59d |
| 613 | 1.7.4.7.2.2.1.2 | Entregable: Fiscalización parcial electrónica de diferencias entre RCVE y DJ de IGV | 1d? | 2018-04-23 | 2018-04-23 | 59d |

| ID | WBS | Task | Duration | Start | Finish | Total slack |
| --- | --- | --- | --- | --- | --- | --- |
| 614 | 1.7.4.7.2.2.2 | **Control de Calidad** | 1d? | 2018-04-23 | 2018-04-23 | 59d |
| 615 | 1.7.4.7.2.2.2.1 | Realizar pruebas de Fiscalización parcial electrónica de diferencias entre RCVE y DJ de IGV | 1d? | 2018-04-23 | 2018-04-23 | 59d |
| 616 | 1.7.4.7.2.2.2.2 | Entregable: Fiscalización parcial electrónica de diferencias entre RCVE y DJ de IGV-QA | 1d? | 2018-04-23 | 2018-04-23 | 59d |
| 617 | 1.7.4.7.2.2.3 | **Implantación** | 1d? | 2018-04-23 | 2018-04-23 | 59d |
| 618 | 1.7.4.7.2.2.3.1 | Implementar Fiscalización parcial electrónica de diferencias entre RCVE y DJ de IGV | 1d? | 2018-04-23 | 2018-04-23 | 59d |
| 619 | 1.7.4.7.2.2.3.2 | Entregable: Fiscalización parcial electrónica de diferencias entre RCVE y DJ de IGV- Implementado | 1d? | 2018-04-23 | 2018-04-23 | 59d |
| 620 | 1.7.4.7.2.3 | **Cierre** | 1d? | 2018-04-23 | 2018-04-23 | 59d |
| 621 | 1.7.4.7.2.3.1 | Realizar el Acta de Aprobación de Fiscalización parcial electrónica de diferencias entre RCVE y DJ de IGV | 1d? | 2018-04-23 | 2018-04-23 | 59d |
| 622 | 1.7.4.7.2.3.2 | Entregable: Acta de Aprobación de Fiscalización parcial electrónica de diferencias entre RCVE y DJ de IGV | 1d? | 2018-04-23 | 2018-04-23 | 59d |
| 623 | 1.8 | **CEI Alineado a Procesos** | 5d? | 2018-04-23 | 2018-04-27 | 55d |
| 624 | 1.8.1 | **Iteración 1** | 5d? | 2018-04-23 | 2018-04-27 | 55d |
| 625 | 1.8.1.1 | Elaborar Documento de Reglas de Negocio | 5d | 2018-04-23 | 2018-04-27 | 55d |
| 626 | 1.8.1.2 | Elaborar Mapa de Procesos AS IS | 1d? | 2018-04-23 | 2018-04-23 | 59d |
| 627 | 1.8.1.3 | Elaborar Mapa de Procesos TO BE | 1d? | 2018-04-23 | 2018-04-23 | 59d |
| 628 | 1.8.1.4 | Elaborar Ficha del Proceso | 1d? | 2018-04-23 | 2018-04-23 | 59d |
| 629 | 1.8.2 | **Iteración 2** | 1d? | 2018-04-23 | 2018-04-23 | 59d |
| 630 | 1.8.2.1 | Elaborar Documento de Reglas de Negocio | 1d? | 2018-04-23 | 2018-04-23 | 59d |
| 631 | 1.8.2.2 | Elaborar Mapa de Procesos AS IS | 1d? | 2018-04-23 | 2018-04-23 | 59d |
| 632 | 1.8.2.3 | Elaborar Mapa de Procesos TO BE | 1d? | 2018-04-23 | 2018-04-23 | 59d |
| 633 | 1.8.2.4 | Elaborar Ficha del Proceso | 1d? | 2018-04-23 | 2018-04-23 | 59d |
